Schedule from MS Project XML, 2019-12-02 to 2021-07-30.

## Calendars

- Standard: Mon-Fri 08:00-12:00, 13:00-17:00; Sat-Sun off. Exceptions (off unless hours are given): 2020-01-23 to 2020-01-24, 2020-01-27 to 2020-01-29, 2020-04-02 to 2020-04-03, 2020-06-25 to 2020-06-26, 2020-10-01 to 2020-10-02, 2020-10-09.

## Schedule

| ID | WBS | Task | Type | Duration | Start | Finish | Complete |
| --- | --- | --- | --- | --- | --- | --- | --- |
| 1 | 1 | **塔位** |  | 39d | 2020-02-03 | 2020-03-27 | 2% |
| 2 | 1.1 | **功能整理** |  | 3d | 2020-02-03 | 2020-02-05 | 33% |
| 3 | 1.1.1 | 列出主要功能 | manual | 1d | 2020-02-03 | 2020-02-03 | 100% |
| 4 | 1.1.2 | 整理TableSchema大項目 | manual | 2d | 2020-02-04 | 2020-02-05 |  |
| 5 | 1.2 | **功能清單** |  | 36d | 2020-02-06 | 2020-03-27 |  |
| 6 | 1.2.1 | **基本資料設定** |  | 2d | 2020-02-06 | 2020-02-07 |  |
| 7 | 1.2.1.1 | **密碼權限設定(JW101)** |  | 1d | 2020-02-06 | 2020-02-06 |  |
| 8 | 1.2.1.1.1 | 撰寫流程圖 | manual | 1d | 2020-02-06 | 2020-02-06 |  |
| 9 | 1.2.1.1.2 | 補上TableSchema | manual | 1d | 2020-02-06 | 2020-02-06 |  |
| 10 | 1.2.1.2 | **銀行代號設定(JW102)** |  | 1d | 2020-02-06 | 2020-02-06 |  |
| 11 | 1.2.1.2.1 | 撰寫流程圖 | manual | 1d | 2020-02-06 | 2020-02-06 |  |
| 12 | 1.2.1.2.2 | 補上TableSchema | manual | 1d | 2020-02-06 | 2020-02-06 |  |
| 13 | 1.2.1.3 | **產品代號設定(JW103)** |  | 1d | 2020-02-07 | 2020-02-07 |  |
| 14 | 1.2.1.3.1 | 撰寫流程圖 | manual | 1d | 2020-02-07 | 2020-02-07 |  |
| 15 | 1.2.1.3.2 | 補上TableSchema | manual | 1d | 2020-02-07 | 2020-02-07 |  |
| 16 | 1.2.1.4 | **國別代號設定(JW104)** |  | 1d | 2020-02-07 | 2020-02-07 |  |
| 17 | 1.2.1.4.1 | 撰寫流程圖 | manual | 1d | 2020-02-07 | 2020-02-07 |  |
| 18 | 1.2.1.4.2 | 補上TableSchema | manual | 1d | 2020-02-07 | 2020-02-07 |  |
| 19 | 1.2.1.5 | **契約類別代號設定(JW116)** |  | 1d | 2020-02-07 | 2020-02-07 |  |
| 20 | 1.2.1.5.1 | 撰寫流程圖 | manual | 1d | 2020-02-07 | 2020-02-07 |  |
| 21 | 1.2.1.5.2 | 補上TableSchema | manual | 1d | 2020-02-07 | 2020-02-07 |  |
| 22 | 1.2.2 | **業務員相關功能** |  | 2d | 2020-02-10 | 2020-02-11 |  |
| 23 | 1.2.2.1 | **業務員建檔(JW109)** |  | 1d | 2020-02-10 | 2020-02-10 |  |
| 24 | 1.2.2.1.1 | 撰寫流程圖 | manual | 1d | 2020-02-10 | 2020-02-10 |  |
| 25 | 1.2.2.1.2 | 補上TableSchema | manual | 1d | 2020-02-10 | 2020-02-10 |  |

| ID | WBS | Task | Type | Duration | Start | Finish |
| --- | --- | --- | --- | --- | --- | --- |
| 26 | 1.2.2.2 | **業務員明細表(JW413)** |  | 2d | 2020-02-10 | 2020-02-11 |
| 27 | 1.2.2.2.1 | 撰寫流程圖 | manual | 2d | 2020-02-10 | 2020-02-11 |
| 28 | 1.2.2.2.2 | 補上TableSchema | manual | 1d | 2020-02-11 | 2020-02-11 |
| 29 | 1.2.3 | **信用卡相關功能** |  | 1d | 2020-02-12 | 2020-02-12 |
| 30 | 1.2.3.1 | **信用卡基本資料登錄(JW117)** |  | 1d | 2020-02-12 | 2020-02-12 |
| 31 | 1.2.3.1.1 | 撰寫流程圖 | manual | 1d | 2020-02-12 | 2020-02-12 |
| 32 | 1.2.3.1.2 | 補上TableSchema | manual | 1d | 2020-02-12 | 2020-02-12 |
| 33 | 1.2.4 | **轉入轉出功能** |  | 2d | 2020-02-13 | 2020-02-14 |
| 34 | 1.2.4.1 | **郵局代收資料匯入(JW213)** |  | 1d | 2020-02-13 | 2020-02-13 |
| 35 | 1.2.4.1.1 | 撰寫流程圖 | manual | 1d | 2020-02-13 | 2020-02-13 |
| 36 | 1.2.4.1.2 | 補上TableSchema | manual | 1d | 2020-02-13 | 2020-02-13 |
| 37 | 1.2.4.2 | **郵局代收資料匯出(JW211)** |  | 2d | 2020-02-13 | 2020-02-14 |
| 38 | 1.2.4.2.1 | 撰寫流程圖 | manual | 2d | 2020-02-13 | 2020-02-14 |
| 39 | 1.2.4.2.2 | 補上TableSchema | manual | 1d | 2020-02-14 | 2020-02-14 |
| 40 | 1.2.5 | **銷售相關功能** |  | 3d | 2020-02-17 | 2020-02-19 |
| 41 | 1.2.5.1 | **銷退明細表(JW441)** |  | 1d | 2020-02-17 | 2020-02-17 |
| 42 | 1.2.5.1.1 | 撰寫流程圖 | manual | 1d | 2020-02-17 | 2020-02-17 |
| 43 | 1.2.5.1.2 | 補上TableSchema | manual | 1d | 2020-02-17 | 2020-02-17 |
| 44 | 1.2.5.2 | **銷貨退回證明單(JW443)** |  | 1d | 2020-02-17 | 2020-02-17 |
| 45 | 1.2.5.2.1 | 撰寫流程圖 | manual | 1d | 2020-02-17 | 2020-02-17 |
| 46 | 1.2.5.2.2 | 補上TableSchema | manual | 1d | 2020-02-17 | 2020-02-17 |
| 47 | 1.2.5.3 | **產品銷售統計表(JW444)** |  | 1d | 2020-02-18 | 2020-02-18 |
| 48 | 1.2.5.3.1 | 撰寫流程圖 | manual | 1d | 2020-02-18 | 2020-02-18 |
| 49 | 1.2.5.3.2 | 補上TableSchema | manual | 1d | 2020-02-18 | 2020-02-18 |

| ID | WBS | Task | Type | Duration | Start | Finish |
| --- | --- | --- | --- | --- | --- | --- |
| 50 | 1.2.5.4 | **成交案件明細表(JW450)** |  | 1d | 2020-02-18 | 2020-02-18 |
| 51 | 1.2.5.4.1 | 撰寫流程圖 | manual | 1d | 2020-02-18 | 2020-02-18 |
| 52 | 1.2.5.4.2 | 補上TableSchema | manual | 1d | 2020-02-18 | 2020-02-18 |
| 53 | 1.2.5.5 | **每月庫存異動統計表(JW451)** |  | 1d | 2020-02-19 | 2020-02-19 |
| 54 | 1.2.5.5.1 | 撰寫流程圖 | manual | 1d | 2020-02-19 | 2020-02-19 |
| 55 | 1.2.5.5.2 | 補上TableSchema | manual | 1d | 2020-02-19 | 2020-02-19 |
| 56 | 1.2.6 | **選位作業功能相關** |  | 6d | 2020-02-19 | 2020-02-26 |
| 57 | 1.2.6.1 | **樓層代號設定(JW105)** |  | 2d | 2020-02-19 | 2020-02-20 |
| 58 | 1.2.6.1.1 | 撰寫流程圖 | manual | 2d | 2020-02-19 | 2020-02-20 |
| 59 | 1.2.6.1.2 | 補上TableSchema | manual | 1d | 2020-02-20 | 2020-02-20 |
| 60 | 1.2.6.2 | **區域代號設定(JW106)** |  | 1d | 2020-02-20 | 2020-02-20 |
| 61 | 1.2.6.2.1 | 撰寫流程圖 | manual | 1d | 2020-02-20 | 2020-02-20 |
| 62 | 1.2.6.2.2 | 補上TableSchema | manual | 1d | 2020-02-20 | 2020-02-20 |
| 63 | 1.2.6.3 | **棟別代號設定(JW114)** |  | 1d | 2020-02-20 | 2020-02-20 |
| 64 | 1.2.6.3.1 | 撰寫流程圖 | manual | 1d | 2020-02-20 | 2020-02-20 |
| 65 | 1.2.6.3.2 | 補上TableSchema | manual | 1d | 2020-02-20 | 2020-02-20 |
| 66 | 1.2.6.4 | **樓層區域單位建檔(JW108)** |  | 1d | 2020-02-21 | 2020-02-21 |
| 67 | 1.2.6.4.1 | 撰寫流程圖 | manual | 1d | 2020-02-21 | 2020-02-21 |
| 68 | 1.2.6.4.2 | 補上TableSchema | manual | 1d | 2020-02-21 | 2020-02-21 |
| 69 | 1.2.6.5 | **選位作業(JW206)** |  | 1d | 2020-02-21 | 2020-02-21 |
| 70 | 1.2.6.5.1 | 撰寫流程圖 | manual | 1d | 2020-02-21 | 2020-02-21 |
| 71 | 1.2.6.5.2 | 補上TableSchema | manual | 1d | 2020-02-21 | 2020-02-21 |
| 72 | 1.2.6.6 | **鎖位作業(JW214)** |  | 1d | 2020-02-24 | 2020-02-24 |
| 73 | 1.2.6.6.1 | 撰寫流程圖 | manual | 1d | 2020-02-24 | 2020-02-24 |
| 74 | 1.2.6.6.2 | 補上TableSchema | manual | 1d | 2020-02-24 | 2020-02-24 |

| ID | WBS | Task | Type | Duration | Start | Finish |
| --- | --- | --- | --- | --- | --- | --- |
| 75 | 1.2.6.7 | **塔位樓層圖查詢(W_JW301)** |  | 2d | 2020-02-25 | 2020-02-26 |
| 76 | 1.2.6.7.1 | 撰寫流程圖 | manual | 2d | 2020-02-25 | 2020-02-26 |
| 77 | 1.2.6.7.2 | 補上TableSchema | manual | 2d | 2020-02-25 | 2020-02-26 |
| 78 | 1.2.6.8 | **樓層單位查詢(JW302)** |  | 1d | 2020-02-26 | 2020-02-26 |
| 79 | 1.2.6.8.1 | 撰寫流程圖 | manual | 1d | 2020-02-26 | 2020-02-26 |
| 80 | 1.2.6.8.2 | 補上TableSchema | manual | 1d | 2020-02-26 | 2020-02-26 |
| 81 | 1.2.7 | **權狀功能相關** |  | 7d | 2020-02-27 | 2020-03-09 |
| 82 | 1.2.7.1 | **權狀明細表(JW419)** |  | 1d | 2020-02-27 | 2020-02-27 |
| 83 | 1.2.7.1.1 | 撰寫流程圖 | manual | 1d | 2020-02-27 | 2020-02-27 |
| 84 | 1.2.7.1.2 | 補上TableSchema | manual | 1d | 2020-02-27 | 2020-02-27 |
| 85 | 1.2.7.2 | **權狀異動作業(JW112)** |  | 1d | 2020-03-02 | 2020-03-02 |
| 86 | 1.2.7.2.1 | 撰寫流程圖 | manual | 1d | 2020-03-02 | 2020-03-02 |
| 87 | 1.2.7.2.2 | 補上TableSchema | manual | 1d | 2020-03-02 | 2020-03-02 |
| 88 | 1.2.7.3 | **權狀合併作業(JW121)** |  | 4d | 2020-03-03 | 2020-03-06 |
| 89 | 1.2.7.3.1 | 撰寫流程圖 | manual | 1d | 2020-03-03 | 2020-03-03 |
| 90 | 1.2.7.3.2 | 補上TableSchema | manual | 1d | 2020-03-06 | 2020-03-06 |
| 91 | 1.2.7.4 | **永久使用權狀列印(JW402)** |  | 1d | 2020-03-04 | 2020-03-04 |
| 92 | 1.2.7.4.1 | 撰寫流程圖 | manual | 1d | 2020-03-04 | 2020-03-04 |
| 93 | 1.2.7.4.2 | 補上TableSchema | manual | 1d | 2020-03-04 | 2020-03-04 |
| 94 | 1.2.7.5 | **永久使用權狀換發憑證列印(JW426)** |  | 2d | 2020-03-04 | 2020-03-05 |
| 95 | 1.2.7.5.1 | 撰寫流程圖 | manual | 2d | 2020-03-04 | 2020-03-05 |
| 96 | 1.2.7.5.2 | 補上TableSchema | manual | 1d | 2020-03-05 | 2020-03-05 |
| 97 | 1.2.7.6 | **捐贈區資料登錄(JW203)** |  | 2d | 2020-03-06 | 2020-03-09 |
| 98 | 1.2.7.6.1 | 撰寫流程圖 | manual | 2d | 2020-03-06 | 2020-03-09 |
| 99 | 1.2.7.6.2 | 補上TableSchema | manual | 1d | 2020-03-06 | 2020-03-06 |

| ID | WBS | Task | Type | Duration | Start | Finish |
| --- | --- | --- | --- | --- | --- | --- |
| 100 | 1.2.8 | **發票相關功能** |  | 12d | 2020-02-06 | 2020-02-21 |
| 101 | 1.2.8.1 | **發票建檔(JW107)** |  | 3d | 2020-02-06 | 2020-02-10 |
| 102 | 1.2.8.1.1 | 撰寫流程圖 | manual | 3d | 2020-02-06 | 2020-02-10 |
| 103 | 1.2.8.1.2 | 補上TableSchema | manual | 1d | 2020-02-10 | 2020-02-10 |
| 104 | 1.2.8.2 | **發票開立作業(JW204)** |  | 5d | 2020-02-11 | 2020-02-17 |
| 105 | 1.2.8.2.1 | 撰寫流程圖 | manual | 5d | 2020-02-11 | 2020-02-17 |
| 106 | 1.2.8.2.2 | 補上TableSchema | manual | 5d | 2020-02-11 | 2020-02-17 |
| 107 | 1.2.8.3 | **發票開立作業-非契約件(JW209)** |  | 3d | 2020-02-18 | 2020-02-20 |
| 108 | 1.2.8.3.1 | 撰寫流程圖 | manual | 3d | 2020-02-18 | 2020-02-20 |
| 109 | 1.2.8.3.2 | 補上TableSchema | manual | 3d | 2020-02-18 | 2020-02-20 |
| 110 | 1.2.8.4 | **電子發票列印(JW437)** |  | 1d | 2020-02-21 | 2020-02-21 |
| 111 | 1.2.8.4.1 | 撰寫流程圖 | manual | 1d | 2020-02-21 | 2020-02-21 |
| 112 | 1.2.8.4.2 | 補上TableSchema | manual | 1d | 2020-02-21 | 2020-02-21 |
| 113 | 1.2.8.5 | **銷退明細表(JW441)** |  | 1d | 2020-02-21 | 2020-02-21 |
| 114 | 1.2.8.5.1 | 撰寫流程圖 | manual | 1d | 2020-02-21 | 2020-02-21 |
| 115 | 1.2.8.5.2 | 補上TableSchema | manual | 1d | 2020-02-21 | 2020-02-21 |
| 116 | 1.2.9 | **客戶功能相關** |  | 15d | 2020-02-24 | 2020-03-16 |
| 117 | 1.2.9.1 | **客戶建檔(JW111)** |  | 1d | 2020-02-24 | 2020-02-24 |
| 118 | 1.2.9.1.1 | 撰寫流程圖 | manual | 1d | 2020-02-24 | 2020-02-24 |
| 119 | 1.2.9.1.2 | 補上TableSchema | manual | 1d | 2020-02-24 | 2020-02-24 |
| 120 | 1.2.9.2 | **預購客戶資料登錄** |  | 7d | 2020-02-25 | 2020-03-05 |
| 121 | 1.2.9.2.1 | 撰寫流程圖 | manual | 7d | 2020-02-25 | 2020-03-05 |
| 122 | 1.2.9.2.2 | 補上TableSchema | manual | 1d | 2020-03-05 | 2020-03-05 |
| 123 | 1.2.9.3 | **尊貴卡資料建檔(JW118)** |  | 1d | 2020-03-06 | 2020-03-06 |
| 124 | 1.2.9.3.1 | 撰寫流程圖 | manual | 1d | 2020-03-06 | 2020-03-06 |
| 125 | 1.2.9.3.2 | 補上TableSchema | manual | 1d | 2020-03-06 | 2020-03-06 |

| ID | WBS | Task | Type | Duration | Start | Finish |
| --- | --- | --- | --- | --- | --- | --- |
| 126 | 1.2.9.4 | **贈蓮專案客戶資料建檔(JW122)** |  | 1d | 2020-03-09 | 2020-03-09 |
| 127 | 1.2.9.4.1 | 撰寫流程圖 | manual | 1d | 2020-03-09 | 2020-03-09 |
| 128 | 1.2.9.4.2 | 補上TableSchema | manual | 1d | 2020-03-09 | 2020-03-09 |
| 129 | 1.2.9.5 | **客戶明細表(JW416)** |  | 1d | 2020-03-09 | 2020-03-09 |
| 130 | 1.2.9.5.1 | 撰寫流程圖 | manual | 1d | 2020-03-09 | 2020-03-09 |
| 131 | 1.2.9.5.2 | 補上TableSchema | manual | 1d | 2020-03-09 | 2020-03-09 |
| 132 | 1.2.9.6 | **客戶資料列印(JW403)** |  | 1d | 2020-03-10 | 2020-03-10 |
| 133 | 1.2.9.6.1 | 撰寫流程圖 | manual | 1d | 2020-03-10 | 2020-03-10 |
| 134 | 1.2.9.6.2 | 補上TableSchema | manual | 1d | 2020-03-10 | 2020-03-10 |
| 135 | 1.2.9.7 | **客戶選位資料表(JW421)** |  | 1d | 2020-03-11 | 2020-03-11 |
| 136 | 1.2.9.7.1 | 撰寫流程圖 | manual | 1d | 2020-03-11 | 2020-03-11 |
| 137 | 1.2.9.7.2 | 補上TableSchema | manual | 1d | 2020-03-11 | 2020-03-11 |
| 138 | 1.2.9.8 | **客戶選位異動資料表(JW442)** |  | 1d | 2020-03-11 | 2020-03-11 |
| 139 | 1.2.9.8.1 | 撰寫流程圖 | manual | 1d | 2020-03-11 | 2020-03-11 |
| 140 | 1.2.9.8.2 | 補上TableSchema | manual | 1d | 2020-03-11 | 2020-03-11 |
| 141 | 1.2.9.9 | **客戶資料權狀列印(JW404)** |  | 1d | 2020-03-12 | 2020-03-12 |
| 142 | 1.2.9.9.1 | 撰寫流程圖 | manual | 1d | 2020-03-12 | 2020-03-12 |
| 143 | 1.2.9.9.2 | 補上TableSchema | manual | 1d | 2020-03-12 | 2020-03-12 |
| 144 | 1.2.9.10 | **客戶郵寄發票地址列印(JW448)** |  | 1d | 2020-03-12 | 2020-03-12 |
| 145 | 1.2.9.10.1 | 撰寫流程圖 | manual | 1d | 2020-03-12 | 2020-03-12 |
| 146 | 1.2.9.10.2 | 補上TableSchema | manual | 1d | 2020-03-12 | 2020-03-12 |
| 147 | 1.2.9.11 | **客戶尊貴卡郵寄地址列印(JW449)** |  | 1d | 2020-03-13 | 2020-03-13 |
| 148 | 1.2.9.11.1 | 撰寫流程圖 | manual | 1d | 2020-03-13 | 2020-03-13 |
| 149 | 1.2.9.11.2 | 補上TableSchema | manual | 1d | 2020-03-13 | 2020-03-13 |

| ID | WBS | Task | Type | Duration | Start | Finish |
| --- | --- | --- | --- | --- | --- | --- |
| 150 | 1.2.9.12 | **未點交客戶資料明細表(JW425)** |  | 1d | 2020-03-13 | 2020-03-13 |
| 151 | 1.2.9.12.1 | 撰寫流程圖 | manual | 1d | 2020-03-13 | 2020-03-13 |
| 152 | 1.2.9.12.2 | 補上TableSchema | manual | 1d | 2020-03-13 | 2020-03-13 |
| 153 | 1.2.9.13 | **客戶異動資料表(JW453)** |  | 1d | 2020-03-16 | 2020-03-16 |
| 154 | 1.2.9.13.1 | 撰寫流程圖 | manual | 1d | 2020-03-16 | 2020-03-16 |
| 155 | 1.2.9.13.2 | 補上TableSchema | manual | 1d | 2020-03-16 | 2020-03-16 |
| 156 | 1.2.9.14 | **臨時性報表-客戶郵寄地址列印(JW452)** |  | 1d | 2020-03-16 | 2020-03-16 |
| 157 | 1.2.9.14.1 | 撰寫流程圖 | manual | 1d | 2020-03-16 | 2020-03-16 |
| 158 | 1.2.9.14.2 | 補上TableSchema | manual | 1d | 2020-03-16 | 2020-03-16 |
| 159 | 1.2.10 | **經銷商相關功能** |  | 3d | 2020-03-18 | 2020-03-20 |
| 160 | 1.2.10.1 | **經銷商建檔(JW110)** |  | 1d | 2020-03-18 | 2020-03-18 |
| 161 | 1.2.10.1.1 | 撰寫流程圖 | manual | 1d | 2020-03-18 | 2020-03-18 |
| 162 | 1.2.10.1.2 | 補上TableSchema | manual | 1d | 2020-03-18 | 2020-03-18 |
| 163 | 1.2.10.2 | **經銷商專案登錄(JW201)** |  | 2d | 2020-03-18 | 2020-03-19 |
| 164 | 1.2.10.2.1 | 撰寫流程圖 | manual | 2d | 2020-03-18 | 2020-03-19 |
| 165 | 1.2.10.2.2 | 補上TableSchema | manual | 1d | 2020-03-19 | 2020-03-19 |
| 166 | 1.2.10.3 | **經銷商合約資料轉入(JW205)** |  | 1d | 2020-03-20 | 2020-03-20 |
| 167 | 1.2.10.3.1 | 撰寫流程圖 | manual | 1d | 2020-03-20 | 2020-03-20 |
| 168 | 1.2.10.3.2 | 補上TableSchema | manual | 1d | 2020-03-20 | 2020-03-20 |
| 169 | 1.2.11 | **收款匯款相關功能** |  | 5d | 2020-03-23 | 2020-03-27 |
| 170 | 1.2.11.1 | **收款性質代號設定(JW115)** |  | 1d | 2020-03-23 | 2020-03-23 |
| 171 | 1.2.11.1.1 | 撰寫流程圖 | manual | 1d | 2020-03-23 | 2020-03-23 |
| 172 | 1.2.11.1.2 | 補上TableSchema | manual | 1d | 2020-03-23 | 2020-03-23 |
| 173 | 1.2.11.2 | **收款單(JW405)** |  | 2d | 2020-03-23 | 2020-03-24 |
| 174 | 1.2.11.2.1 | 撰寫流程圖 | manual | 2d | 2020-03-23 | 2020-03-24 |
| 175 | 1.2.11.2.2 | 補上TableSchema | manual | 1d | 2020-03-24 | 2020-03-24 |

| ID | WBS | Task | Type | Duration | Start | Finish | Complete |
| --- | --- | --- | --- | --- | --- | --- | --- |
| 176 | 1.2.11.3 | **收款單-非契約件(JW434)** |  | 2d | 2020-03-24 | 2020-03-25 |  |
| 177 | 1.2.11.3.1 | 撰寫流程圖 | manual | 2d | 2020-03-24 | 2020-03-25 |  |
| 178 | 1.2.11.3.2 | 補上TableSchema | manual | 1d | 2020-03-25 | 2020-03-25 |  |
| 179 | 1.2.11.4 | **分期資料明細表-業務部(JW432)** |  | 1d | 2020-03-26 | 2020-03-26 |  |
| 180 | 1.2.11.4.1 | 撰寫流程圖 | manual | 1d | 2020-03-26 | 2020-03-26 |  |
| 181 | 1.2.11.4.2 | 補上TableSchema | manual | 1d | 2020-03-26 | 2020-03-26 |  |
| 182 | 1.2.11.5 | **分期繳款資料明細表(JW433)** |  | 1d | 2020-03-26 | 2020-03-26 |  |
| 183 | 1.2.11.5.1 | 撰寫流程圖 | manual | 1d | 2020-03-26 | 2020-03-26 |  |
| 184 | 1.2.11.5.2 | 補上TableSchema | manual | 1d | 2020-03-26 | 2020-03-26 |  |
| 185 | 1.2.11.6 | **匯款劃撥單列印(JW436)** |  | 1d | 2020-03-27 | 2020-03-27 |  |
| 186 | 1.2.11.6.1 | 撰寫流程圖 | manual | 1d | 2020-03-27 | 2020-03-27 |  |
| 187 | 1.2.11.6.2 | 補上TableSchema | manual | 1d | 2020-03-27 | 2020-03-27 |  |
| 188 | 1.2.11.7 | **違約金預估明細表(JW440)** |  | 1d | 2020-03-27 | 2020-03-27 |  |
| 189 | 1.2.11.7.1 | 撰寫流程圖 | manual | 1d | 2020-03-27 | 2020-03-27 |  |
| 190 | 1.2.11.7.2 | 補上TableSchema | manual | 1d | 2020-03-27 | 2020-03-27 |  |
| 191 | 2 | **契約** |  | 29d | 2020-03-26 | 2020-05-08 | 3% |
| 192 | 2.1 | **功能整理** |  | 2d | 2020-03-26 | 2020-03-27 | 50% |
| 193 | 2.1.1 | 列出主要功能 | manual | 1d | 2020-03-26 | 2020-03-26 | 100% |
| 194 | 2.1.2 | 整理Table Schema大項目 | manual | 1d | 2020-03-27 | 2020-03-27 |  |
| 195 | 2.2 | **功能清單** |  | 28d | 2020-03-27 | 2020-05-08 |  |
| 196 | 2.2.1 | **契約相關功能** |  | 5d | 2020-03-27 | 2020-04-06 |  |
| 197 | 2.2.1.1 | **幸福契約資料登錄(CF202)** |  | 5d | 2020-03-27 | 2020-04-06 |  |
| 198 | 2.2.1.1.1 | 撰寫流程圖 | manual | 5d | 2020-03-27 | 2020-04-06 |  |
| 199 | 2.2.1.1.2 | 補上TableSchema | manual | 1d | 2020-04-06 | 2020-04-06 |  |

| ID | WBS | Task | Type | Duration | Start | Finish |
| --- | --- | --- | --- | --- | --- | --- |
| 200 | 2.2.1.2 | **契約過戶作業(CF211)** |  | 1d | 2020-04-06 | 2020-04-06 |
| 201 | 2.2.1.2.1 | 補上TableSchema | manual | 1d | 2020-04-06 | 2020-04-06 |
| 202 | 2.2.1.2.2 | 撰寫流程圖 | manual | 1d | 2020-04-06 | 2020-04-06 |
| 203 | 2.2.1.3 | **契約資料明細表(CF418)** |  | 1d | 2020-04-06 | 2020-04-06 |
| 204 | 2.2.1.3.1 | 補上TableSchema | manual | 1d | 2020-04-06 | 2020-04-06 |
| 205 | 2.2.1.3.2 | 撰寫流程圖 | manual | 1d | 2020-04-06 | 2020-04-06 |
| 206 | 2.2.1.4 | **有效契約月報表-發票日(CF433)** |  | 1d | 2020-04-06 | 2020-04-06 |
| 207 | 2.2.1.4.1 | 補上TableSchema | manual | 1d | 2020-04-06 | 2020-04-06 |
| 208 | 2.2.1.4.2 | 撰寫流程圖 | manual | 1d | 2020-04-06 | 2020-04-06 |
| 209 | 2.2.1.5 | **有效契約月報表-簽約日(CF444)** |  | 1d | 2020-04-06 | 2020-04-06 |
| 210 | 2.2.1.5.1 | 補上TableSchema | manual | 1d | 2020-04-06 | 2020-04-06 |
| 211 | 2.2.1.5.2 | 撰寫流程圖 | manual | 1d | 2020-04-06 | 2020-04-06 |
| 212 | 2.2.1.6 | **契約銷退通知明細表(CF442)** |  | 1d | 2020-04-06 | 2020-04-06 |
| 213 | 2.2.1.6.1 | 補上TableSchema | manual | 1d | 2020-04-06 | 2020-04-06 |
| 214 | 2.2.1.6.2 | 撰寫流程圖 | manual | 1d | 2020-04-06 | 2020-04-06 |
| 215 | 2.2.2 | **發票相關功能** |  | 8d | 2020-04-07 | 2020-04-16 |
| 216 | 2.2.2.1 | **發票建檔(CF107)** |  | 2d | 2020-04-07 | 2020-04-08 |
| 217 | 2.2.2.1.1 | 撰寫流程圖 | manual | 2d | 2020-04-07 | 2020-04-08 |
| 218 | 2.2.2.1.2 | 補上TableSchema | manual | 1d | 2020-04-08 | 2020-04-08 |
| 219 | 2.2.2.2 | **發票開立作業(CF204)** |  | 3d | 2020-04-08 | 2020-04-10 |
| 220 | 2.2.2.2.1 | 撰寫流程圖 | manual | 3d | 2020-04-08 | 2020-04-10 |
| 221 | 2.2.2.2.2 | 補上TableSchema | manual | 1d | 2020-04-10 | 2020-04-10 |
| 222 | 2.2.2.3 | **發票開立作業－非契約件(CF215)** |  | 1d | 2020-04-10 | 2020-04-10 |
| 223 | 2.2.2.3.1 | 撰寫流程圖 | manual | 1d | 2020-04-10 | 2020-04-10 |
| 224 | 2.2.2.3.2 | 補上TableSchema | manual | 1d | 2020-04-10 | 2020-04-10 |

| ID | WBS | Task | Type | Duration | Start | Finish |
| --- | --- | --- | --- | --- | --- | --- |
| 225 | 2.2.2.4 | **滿福360批次發票開立(CF228)** |  | 1d | 2020-04-13 | 2020-04-13 |
| 226 | 2.2.2.4.1 | 撰寫流程圖 | manual | 1d | 2020-04-13 | 2020-04-13 |
| 227 | 2.2.2.4.2 | 補上TableSchema | manual | 1d | 2020-04-13 | 2020-04-13 |
| 228 | 2.2.2.5 | **發票批次銷退(CF230)** |  | 1d | 2020-04-14 | 2020-04-14 |
| 229 | 2.2.2.5.1 | 撰寫流程圖 | manual | 1d | 2020-04-14 | 2020-04-14 |
| 230 | 2.2.2.5.2 | 補上TableSchema | manual | 1d | 2020-04-14 | 2020-04-14 |
| 231 | 2.2.2.6 | **發票明細資料(CF438)** |  | 2d | 2020-04-14 | 2020-04-15 |
| 232 | 2.2.2.6.1 | 撰寫流程圖 | manual | 1d | 2020-04-14 | 2020-04-14 |
| 233 | 2.2.2.6.2 | 補上TableSchema | manual | 2d | 2020-04-14 | 2020-04-15 |
| 234 | 2.2.2.7 | **發票銷退折讓明細表(CF231)** |  | 1d | 2020-04-15 | 2020-04-15 |
| 235 | 2.2.2.7.1 | 撰寫流程圖 | manual | 1d | 2020-04-15 | 2020-04-15 |
| 236 | 2.2.2.7.2 | 補上TableSchema | manual | 1d | 2020-04-15 | 2020-04-15 |
| 237 | 2.2.2.8 | **電子發票列印(CF440)** |  | 2d | 2020-04-15 | 2020-04-16 |
| 238 | 2.2.2.8.1 | 補上TableSchema | manual | 1d | 2020-04-15 | 2020-04-15 |
| 239 | 2.2.2.8.2 | 撰寫流程圖 | manual | 2d | 2020-04-15 | 2020-04-16 |
| 240 | 2.2.3 | **信用卡相關功能** |  | 3d | 2020-04-16 | 2020-04-20 |
| 241 | 2.2.3.1 | **信用卡資料建檔(CF114)** |  | 1d | 2020-04-16 | 2020-04-16 |
| 242 | 2.2.3.1.1 | 撰寫流程圖 | manual | 1d | 2020-04-16 | 2020-04-16 |
| 243 | 2.2.3.1.2 | 補上TableSchema | manual | 1d | 2020-04-16 | 2020-04-16 |
| 244 | 2.2.3.2 | **紅陽/藍新回傳刷卡資料轉入(CF220)** |  | 2d | 2020-04-16 | 2020-04-17 |
| 245 | 2.2.3.2.1 | 撰寫流程圖 | manual | 2d | 2020-04-16 | 2020-04-17 |
| 246 | 2.2.3.2.2 | 補上TableSchema | manual | 1d | 2020-04-17 | 2020-04-17 |
| 247 | 2.2.3.3 | **紅陽/藍新代刷資料轉出(CF227)** |  | 1d | 2020-04-17 | 2020-04-17 |
| 248 | 2.2.3.3.1 | 撰寫流程圖 | manual | 1d | 2020-04-17 | 2020-04-17 |
| 249 | 2.2.3.3.2 | 補上TableSchema | manual | 1d | 2020-04-17 | 2020-04-17 |

| ID | WBS | Task | Type | Duration | Start | Finish |
| --- | --- | --- | --- | --- | --- | --- |
| 250 | 2.2.3.4 | **信用卡繳款資料篩選(CF430)** |  | 1d | 2020-04-20 | 2020-04-20 |
| 251 | 2.2.3.4.1 | 撰寫流程圖 | manual | 1d | 2020-04-20 | 2020-04-20 |
| 252 | 2.2.3.4.2 | 補上TableSchema | manual | 1d | 2020-04-20 | 2020-04-20 |
| 253 | 2.2.3.5 | **失效件通知函列印-首次寄發版(CF453)** |  | 1d | 2020-04-20 | 2020-04-20 |
| 254 | 2.2.3.5.1 | 撰寫流程圖 | manual | 1d | 2020-04-20 | 2020-04-20 |
| 255 | 2.2.3.5.2 | 補上TableSchema | manual | 1d | 2020-04-20 | 2020-04-20 |
| 256 | 2.2.4 | **基本資料相關設定** |  | 2d | 2020-04-21 | 2020-04-22 |
| 257 | 2.2.4.1 | **密碼權限設定(CF101)** |  | 1d | 2020-04-21 | 2020-04-21 |
| 258 | 2.2.4.1.1 | 撰寫流程圖 | manual | 1d | 2020-04-21 | 2020-04-21 |
| 259 | 2.2.4.1.2 | 補上TableSchema | manual | 1d | 2020-04-21 | 2020-04-21 |
| 260 | 2.2.4.2 | **銀行代號設定(CF102)** |  | 1d | 2020-04-21 | 2020-04-21 |
| 261 | 2.2.4.2.1 | 撰寫流程圖 | manual | 1d | 2020-04-21 | 2020-04-21 |
| 262 | 2.2.4.2.2 | 補上TableSchema | manual | 1d | 2020-04-21 | 2020-04-21 |
| 263 | 2.2.4.3 | **產品代號設定(CF103)** |  | 1d | 2020-04-21 | 2020-04-21 |
| 264 | 2.2.4.3.1 | 撰寫流程圖 | manual | 1d | 2020-04-21 | 2020-04-21 |
| 265 | 2.2.4.3.2 | 補上TableSchema | manual | 1d | 2020-04-21 | 2020-04-21 |
| 266 | 2.2.4.4 | **郵遞區號設定(CF112)** |  | 1d | 2020-04-22 | 2020-04-22 |
| 267 | 2.2.4.4.1 | 撰寫流程圖 | manual | 1d | 2020-04-22 | 2020-04-22 |
| 268 | 2.2.4.4.2 | 補上TableSchema | manual | 1d | 2020-04-22 | 2020-04-22 |
| 269 | 2.2.4.5 | **國別代號設定(CF104)** |  | 1d | 2020-04-22 | 2020-04-22 |
| 270 | 2.2.4.5.1 | 撰寫流程圖 | manual | 1d | 2020-04-22 | 2020-04-22 |
| 271 | 2.2.4.5.2 | 補上TableSchema | manual | 1d | 2020-04-22 | 2020-04-22 |
| 272 | 2.2.5 | **業務員相關功能** |  | 1d | 2020-04-23 | 2020-04-23 |
| 273 | 2.2.5.1 | **業務員建檔(CF109)** |  | 1d | 2020-04-23 | 2020-04-23 |
| 274 | 2.2.5.1.1 | 補上TableSchema | manual | 1d | 2020-04-23 | 2020-04-23 |
| 275 | 2.2.5.1.2 | 撰寫流程圖 | manual | 1d | 2020-04-23 | 2020-04-23 |

| ID | WBS | Task | Type | Duration | Start | Finish |
| --- | --- | --- | --- | --- | --- | --- |
| 276 | 2.2.5.2 | **業務員業績明細表(CF448)** |  | 1d | 2020-04-23 | 2020-04-23 |
| 277 | 2.2.5.2.1 | 補上TableSchema | manual | 1d | 2020-04-23 | 2020-04-23 |
| 278 | 2.2.5.2.2 | 撰寫流程圖 | manual | 1d | 2020-04-23 | 2020-04-23 |
| 279 | 2.2.5.3 | **業務津貼明細資料表(CF449)** |  | 1d | 2020-04-23 | 2020-04-23 |
| 280 | 2.2.5.3.1 | 補上TableSchema | manual | 1d | 2020-04-23 | 2020-04-23 |
| 281 | 2.2.5.3.2 | 撰寫流程圖 | manual | 1d | 2020-04-23 | 2020-04-23 |
| 282 | 2.2.6 | **客戶相關功能** |  | 2d | 2020-04-24 | 2020-04-27 |
| 283 | 2.2.6.1 | **客戶建檔(CF111)** |  | 1d | 2020-04-24 | 2020-04-24 |
| 284 | 2.2.6.1.1 | 補上TableSchema | manual | 1d | 2020-04-24 | 2020-04-24 |
| 285 | 2.2.6.1.2 | 撰寫流程圖 | manual | 1d | 2020-04-24 | 2020-04-24 |
| 286 | 2.2.6.2 | **客戶資料明細表(CF416)** |  | 2d | 2020-04-24 | 2020-04-27 |
| 287 | 2.2.6.2.1 | 補上TableSchema | manual | 1d | 2020-04-24 | 2020-04-24 |
| 288 | 2.2.6.2.2 | 撰寫流程圖 | manual | 1d | 2020-04-24 | 2020-04-24 |
| 289 | 2.2.6.2.3 | **銷貨退回證明單(CF436)** |  | 1d | 2020-04-27 | 2020-04-27 |
| 290 | 2.2.6.2.3.1 | 補上TableSchema | manual | 1d | 2020-04-27 | 2020-04-27 |
| 291 | 2.2.6.2.3.2 | 撰寫流程圖 | manual | 1d | 2020-04-27 | 2020-04-27 |
| 292 | 2.2.6.3 | **客戶地址列印(CF452)** |  | 1d | 2020-04-27 | 2020-04-27 |
| 293 | 2.2.6.3.1 | 補上TableSchema | manual | 1d | 2020-04-27 | 2020-04-27 |
| 294 | 2.2.6.3.2 | 撰寫流程圖 | manual | 1d | 2020-04-27 | 2020-04-27 |
| 295 | 2.2.7 | **轉入轉出相關功能** |  | 5d | 2020-04-22 | 2020-04-28 |
| 296 | 2.2.7.1 | **薪資代繳資料轉入(CF216)** |  | 1d | 2020-04-27 | 2020-04-27 |
| 297 | 2.2.7.1.1 | 補上TableSchema | manual | 1d | 2020-04-27 | 2020-04-27 |
| 298 | 2.2.7.1.2 | 撰寫流程圖 | manual | 1d | 2020-04-27 | 2020-04-27 |
| 299 | 2.2.7.2 | **銀行匯款資料轉入(CF214)** |  | 1d | 2020-04-27 | 2020-04-27 |
| 300 | 2.2.7.2.1 | 補上TableSchema | manual | 1d | 2020-04-27 | 2020-04-27 |
| 301 | 2.2.7.2.2 | 撰寫流程圖 | manual | 1d | 2020-04-27 | 2020-04-27 |

| ID | WBS | Task | Type | Duration | Start | Finish |
| --- | --- | --- | --- | --- | --- | --- |
| 302 | 2.2.7.3 | **回傳郵局代繳資料轉入(CF210)** |  | 1d | 2020-04-28 | 2020-04-28 |
| 303 | 2.2.7.3.1 | 補上TableSchema | manual | 1d | 2020-04-28 | 2020-04-28 |
| 304 | 2.2.7.3.2 | 撰寫流程圖 | manual | 1d | 2020-04-28 | 2020-04-28 |
| 305 | 2.2.7.4 | **郵局代收資料轉出(CF226)** |  | 1d | 2020-04-28 | 2020-04-28 |
| 306 | 2.2.7.4.1 | 補上TableSchema | manual | 1d | 2020-04-28 | 2020-04-28 |
| 307 | 2.2.7.4.2 | 撰寫流程圖 | manual | 1d | 2020-04-28 | 2020-04-28 |
| 308 | 2.2.7.5 | **信託資料轉出(CF212)** |  | 1d | 2020-04-28 | 2020-04-28 |
| 309 | 2.2.7.5.1 | 補上TableSchema | manual | 1d | 2020-04-28 | 2020-04-28 |
| 310 | 2.2.7.5.2 | 撰寫流程圖 | manual | 1d | 2020-04-28 | 2020-04-28 |
| 311 | 2.2.7.6 | **經銷商建檔(CF110)** |  | 1d | 2020-04-22 | 2020-04-22 |
| 312 | 2.2.7.6.1 | 補上TableSchema | manual | 1d | 2020-04-22 | 2020-04-22 |
| 313 | 2.2.7.6.2 | 撰寫流程圖 | manual | 1d | 2020-04-22 | 2020-04-22 |
| 314 | 2.2.8 | **收款匯款相關功能** |  | 5d | 2020-04-29 | 2020-05-06 |
| 315 | 2.2.8.1 | **收款性質代號設定(CF115)** |  | 1d | 2020-04-29 | 2020-04-29 |
| 316 | 2.2.8.1.1 | 補上TableSchema | manual | 1d | 2020-04-29 | 2020-04-29 |
| 317 | 2.2.8.1.2 | 撰寫流程圖 | manual | 1d | 2020-04-29 | 2020-04-29 |
| 318 | 2.2.8.2 | **收款資料登錄(CF205)** |  | 1d | 2020-04-29 | 2020-04-29 |
| 319 | 2.2.8.2.1 | 補上TableSchema | manual | 1d | 2020-04-29 | 2020-04-29 |
| 320 | 2.2.8.2.2 | 撰寫流程圖 | manual | 1d | 2020-04-29 | 2020-04-29 |
| 321 | 2.2.8.3 | **收款單明細資料(CF420)** |  | 1d | 2020-04-30 | 2020-04-30 |
| 322 | 2.2.8.3.1 | 補上TableSchema | manual | 1d | 2020-04-30 | 2020-04-30 |
| 323 | 2.2.8.3.2 | 撰寫流程圖 | manual | 1d | 2020-04-30 | 2020-04-30 |
| 324 | 2.2.8.4 | **收款單明細資料-非契約件(CF447)** |  | 1d | 2020-04-30 | 2020-04-30 |
| 325 | 2.2.8.4.1 | 補上TableSchema | manual | 1d | 2020-04-30 | 2020-04-30 |
| 326 | 2.2.8.4.2 | 撰寫流程圖 | manual | 1d | 2020-04-30 | 2020-04-30 |

| ID | WBS | Task | Type | Duration | Start | Finish |
| --- | --- | --- | --- | --- | --- | --- |
| 327 | 2.2.8.5 | **匯款劃撥單套印(CF427)** |  | 1d | 2020-05-04 | 2020-05-04 |
| 328 | 2.2.8.5.1 | 補上TableSchema | manual | 1d | 2020-05-04 | 2020-05-04 |
| 329 | 2.2.8.5.2 | 撰寫流程圖 | manual | 1d | 2020-05-04 | 2020-05-04 |
| 330 | 2.2.8.6 | **催款查詢作業(CF302)** |  | 1d | 2020-05-04 | 2020-05-04 |
| 331 | 2.2.8.6.1 | **撰寫流程圖** |  | 1d | 2020-05-04 | 2020-05-04 |
| 332 | 2.2.8.6.1.1 | 補上TableSchema | manual | 1d | 2020-05-04 | 2020-05-04 |
| 333 | 2.2.8.7 | **已繳分期款資料明細表(CF413)** |  | 2d | 2020-05-04 | 2020-05-05 |
| 334 | 2.2.8.7.1 | 補上TableSchema | manual | 1d | 2020-05-04 | 2020-05-04 |
| 335 | 2.2.8.7.2 | 撰寫流程圖 | manual | 1d | 2020-05-05 | 2020-05-05 |
| 336 | 2.2.8.8 | **分期繳款資料明細表-財務部(CF419)** |  | 1d | 2020-05-05 | 2020-05-05 |
| 337 | 2.2.8.8.1 | 補上TableSchema | manual | 1d | 2020-05-05 | 2020-05-05 |
| 338 | 2.2.8.8.2 | 撰寫流程圖 | manual | 1d | 2020-05-05 | 2020-05-05 |
| 339 | 2.2.8.9 | **分其繳款資料明細表-業務部(CF432)** |  | 1d | 2020-05-05 | 2020-05-05 |
| 340 | 2.2.8.9.1 | 補上TableSchema | manual | 1d | 2020-05-05 | 2020-05-05 |
| 341 | 2.2.8.9.2 | 撰寫流程圖 | manual | 1d | 2020-05-05 | 2020-05-05 |
| 342 | 2.2.8.10 | **未繳款資料明細表(CF412)** |  | 2d | 2020-05-05 | 2020-05-06 |
| 343 | 2.2.8.10.1 | 補上TableSchema | manual | 2d | 2020-05-05 | 2020-05-06 |
| 344 | 2.2.8.10.2 | 撰寫流程圖 | manual | 1d | 2020-05-06 | 2020-05-06 |
| 345 | 2.2.9 | **塔位相關功能** |  | 1d | 2020-05-06 | 2020-05-06 |
| 346 | 2.2.9.1 | **塔位認列資料明細表(CF454)** |  | 1d | 2020-05-06 | 2020-05-06 |
| 347 | 2.2.9.1.1 | 補上TableSchema | manual | 1d | 2020-05-06 | 2020-05-06 |
| 348 | 2.2.9.1.2 | 撰寫流程圖 | manual | 1d | 2020-05-06 | 2020-05-06 |
| 349 | 2.2.9.2 | **塔位配置示意圖(CF443)** |  | 1d | 2020-05-06 | 2020-05-06 |
| 350 | 2.2.9.2.1 | 補上TableSchema | manual | 1d | 2020-05-06 | 2020-05-06 |
| 351 | 2.2.9.2.2 | 撰寫流程圖 | manual | 1d | 2020-05-06 | 2020-05-06 |

| ID | WBS | Task | Type | Duration | Start | Finish | Complete |
| --- | --- | --- | --- | --- | --- | --- | --- |
| 352 | 2.2.10 | **銷售相關功能** |  | 2d | 2020-05-07 | 2020-05-08 |  |
| 353 | 2.2.10.1 | **銷售件數統計分析(CF303)** |  | 1d | 2020-05-07 | 2020-05-07 |  |
| 354 | 2.2.10.1.1 | 補上TableSchema | manual | 1d | 2020-05-07 | 2020-05-07 |  |
| 355 | 2.2.10.1.2 | 撰寫流程圖 | manual | 1d | 2020-05-07 | 2020-05-07 |  |
| 356 | 2.2.10.2 | **專案銷售統計-專案別(CF304)** |  | 1d | 2020-05-07 | 2020-05-07 |  |
| 357 | 2.2.10.2.1 | 補上TableSchema | manual | 1d | 2020-05-07 | 2020-05-07 |  |
| 358 | 2.2.10.2.2 | 撰寫流程圖 | manual | 1d | 2020-05-07 | 2020-05-07 |  |
| 359 | 2.2.10.3 | **銷售資料統計(CF301)** |  | 1d | 2020-05-08 | 2020-05-08 |  |
| 360 | 2.2.10.3.1 | 補上TableSchema | manual | 1d | 2020-05-08 | 2020-05-08 |  |
| 361 | 2.2.10.3.2 | 撰寫流程圖 | manual | 1d | 2020-05-08 | 2020-05-08 |  |
| 362 | 2.2.10.4 | **銷貨退回證明單(CF436)** |  | 1d | 2020-05-08 | 2020-05-08 |  |
| 363 | 2.2.10.4.1 | 補上TableSchema | manual | 1d | 2020-05-08 | 2020-05-08 |  |
| 364 | 2.2.10.4.2 | 撰寫流程圖 | manual | 1d | 2020-05-08 | 2020-05-08 |  |
| 365 | 2.2.10.5 | **區域銷售件數統計表(CF446)** |  | 1d | 2020-05-08 | 2020-05-08 |  |
| 366 | 2.2.10.5.1 | 補上TableSchema | manual | 1d | 2020-05-08 | 2020-05-08 |  |
| 367 | 2.2.10.5.2 | 撰寫流程圖 | manual | 1d | 2020-05-08 | 2020-05-08 |  |
| 368 | 3 | **禮儀** |  | 13d | 2020-03-10 | 2020-03-26 | 7% |
| 369 | 3.1 | **功能整理** |  | 4d | 2020-03-10 | 2020-03-13 | 25% |
| 370 | 3.1.1 | 列出主要功能 | manual | 1d | 2020-03-10 | 2020-03-10 | 100% |
| 371 | 3.1.2 | 整理TableSchema大項目 | manual | 3d | 2020-03-11 | 2020-03-13 |  |
| 372 | 3.2 | **功能清單** |  | 9d | 2020-03-16 | 2020-03-26 |  |
| 373 | 3.2.1 | **基本建檔維護** |  | 4d | 2020-03-16 | 2020-03-19 |  |
| 374 | 3.2.1.1 | 密碼權限設定(DC101) | manual | 1d | 2020-03-16 | 2020-03-16 |  |
| 375 | 3.2.1.2 | 客戶資料建檔(DC102) | manual | 1d | 2020-03-16 | 2020-03-16 |  |
| 376 | 3.2.1.3 | 郵遞區號設定(DC103) | manual | 1d | 2020-03-17 | 2020-03-17 |  |
| 377 | 3.2.1.4 | 廠商基本資料建檔(DC106) | manual | 1d | 2020-03-17 | 2020-03-17 |  |
| 378 | 3.2.1.5 | 產品代號設定(DC104) | manual | 1d | 2020-03-18 | 2020-03-18 |  |
| 379 | 3.2.1.6 | 產品選項內容設定(DC105) | manual | 2d | 2020-03-18 | 2020-03-19 |  |

| ID | WBS | Task | Type | Duration | Start | Finish | Complete |
| --- | --- | --- | --- | --- | --- | --- | --- |
| 380 | 3.2.2 | **日常建檔維護** |  | 5d | 2020-03-20 | 2020-03-26 |  |
| 381 | 3.2.2.1 | 殯儀服務資料登錄(DC201) | manual | 5d | 2020-03-20 | 2020-03-26 |  |
| 382 | 4 | **電子發票串接** |  | 3d | 2020-02-17 | 2020-02-19 |  |
| 383 | 4.1 | 整理轉檔格式 | manual | 1d | 2020-02-17 | 2020-02-17 |  |
| 384 | 4.2 | 轉出符合格式文件 | manual | 2d | 2020-02-18 | 2020-02-19 |  |
| 385 | 5 | **財會系統串接** |  | 7d | 2020-02-20 | 2020-03-02 |  |
| 386 | 5.1 | 整理轉檔格式 | manual | 3d | 2020-02-20 | 2020-02-24 |  |
| 387 | 5.2 | 撰寫程式 | manual | 4d | 2020-02-25 | 2020-03-02 |  |
| 388 | 6 | **塔陵** |  | 146d | 2019-12-02 | 2020-07-08 | 43% |
| 389 | 6.1 | **基本資料** |  | 25d | 2019-12-02 | 2020-01-06 | 100% |
| 390 | 6.1.1 | 資料表範圍確認 | manual | 10d | 2019-12-02 | 2019-12-13 | 100% |
| 391 | 6.1.2 | **資料表設計** |  | 10d | 2019-12-16 | 2019-12-27 | 100% |
| 392 | 6.1.2.1 | 客戶 | manual | 3d | 2019-12-16 | 2019-12-18 | 100% |
| 393 | 6.1.2.2 | 家族 | manual | 3d | 2019-12-16 | 2019-12-18 | 100% |
| 394 | 6.1.2.3 | 經銷商 | manual | 1d | 2019-12-19 | 2019-12-19 | 100% |
| 395 | 6.1.2.4 | 業務 | manual | 1d | 2019-12-19 | 2019-12-19 | 100% |
| 396 | 6.1.2.5 | 常用代號設定 | manual | 2d | 2019-12-19 | 2019-12-20 | 100% |
| 397 | 6.1.2.6 | 產品 | manual | 2d | 2019-12-19 | 2019-12-20 | 100% |
| 398 | 6.1.2.7 | 棟別樓層區域 | manual | 2d | 2019-12-19 | 2019-12-20 | 100% |
| 399 | 6.1.2.8 | 會計科目 | manual | 1d | 2019-12-23 | 2019-12-23 | 100% |
| 400 | 6.1.2.9 | 費用管理 | manual | 3d | 2019-12-23 | 2019-12-25 | 100% |
| 401 | 6.1.2.10 | 權狀 | manual | 3d | 2019-12-25 | 2019-12-27 | 100% |
| 402 | 6.1.3 | 列出必要操作 | manual | 5d | 2019-12-30 | 2020-01-06 | 100% |
| 403 | 6.2 | **塔墓銷售** |  | 29d | 2020-02-03 | 2020-03-13 | 100% |
| 404 | 6.2.1 | 資料表範圍確認 | manual | 10d | 2020-02-03 | 2020-02-14 | 100% |

Notes:
- 383: 整理提供各式電子發票項目之文字檔轉檔格式(上傳、銷退、折讓、作廢)
- 384: 相關系統轉出符合相關格式之文字檔，至文中相關Folder
- 386: 整理提供財會系統轉帳傳票之文字檔或Excel轉檔格式
- 387: 撰寫依據格式轉入會計系統之程式

| ID | WBS | Task | Type | Duration | Start | Finish | Complete |
| --- | --- | --- | --- | --- | --- | --- | --- |
| 405 | 6.2.2 | **資料表設計** |  | 14d | 2020-02-17 | 2020-03-06 | 100% |
| 406 | 6.2.2.1 | 客戶參觀單 | manual | 2d | 2020-02-17 | 2020-02-18 | 100% |
| 407 | 6.2.2.2 | 塔位墓地保留單(停用) | manual | 1d | 2020-02-19 | 2020-02-19 | 100% |
| 408 | 6.2.2.3 | 銷售單 | manual | 3d | 2020-02-20 | 2020-02-24 | 100% |
| 409 | 6.2.2.4 | 分期付款 | manual | 2d | 2020-02-25 | 2020-02-26 | 100% |
| 410 | 6.2.2.5 | 發票開立 | manual | 2d | 2020-02-27 | 2020-03-02 | 100% |
| 411 | 6.2.2.6 | 信用卡授權 | manual | 1d | 2020-03-02 | 2020-03-02 | 100% |
| 412 | 6.2.2.7 | 行政異動收款 | manual | 2d | 2020-03-02 | 2020-03-03 | 100% |
| 413 | 6.2.2.8 | 契約管理 | manual | 1d | 2020-03-04 | 2020-03-04 | 100% |
| 414 | 6.2.2.9 | 權狀管理 | manual | 3d | 2020-03-04 | 2020-03-06 | 100% |
| 415 | 6.2.2.10 | 收款紀錄 | manual | 3d | 2020-03-04 | 2020-03-06 | 100% |
| 416 | 6.2.3 | 列出必要操作 | manual | 5d | 2020-03-09 | 2020-03-13 | 100% |
| 417 | 6.3 | **供飯** |  | 35d | 2020-03-27 | 2020-05-19 |  |
| 418 | 6.3.1 | 資料表範圍確認 | manual | 10d | 2020-03-27 | 2020-04-13 |  |
| 419 | 6.3.2 | 資料表設計 | manual | 20d | 2020-04-14 | 2020-05-12 |  |
| 420 | 6.3.3 | 列出必要操作 | manual | 5d | 2020-05-13 | 2020-05-19 |  |
| 421 | 6.4 | **琉璃佛** |  | 34d | 2020-05-20 | 2020-07-08 |  |
| 422 | 6.4.1 | 資料表範圍確認 | manual | 10d | 2020-05-20 | 2020-06-02 |  |
| 423 | 6.4.2 | 資料表設計 | manual | 20d | 2020-06-03 | 2020-07-02 |  |
| 424 | 6.4.3 | 列出必要操作 | manual | 5d | 2020-07-02 | 2020-07-08 |  |
| 425 | 7 | **整理新系統(塔位,契約,塔陵)** |  | 7d | 2020-05-11 | 2020-05-19 |  |
| 426 | 7.1 | 列出必要功能 | manual | 3d | 2020-05-11 | 2020-05-13 |  |
| 427 | 7.2 | 合併塔陵資料表 | manual | 5d | 2020-05-11 | 2020-05-15 |  |
| 428 | 7.3 | 列出必要操作 | manual | 4d | 2020-05-14 | 2020-05-19 |  |

Notes:
- 425: 整合: 塔位+ 契約+塔陵-基本資料+塔陵-塔墓銷售
- 426: 整理有存活的功能.列出清單
- 428: 功能應該要有哪些操作繼續保留

| ID | WBS | Task | Type | Duration | Start | Finish |
| --- | --- | --- | --- | --- | --- | --- |
| 429 | 8 | **法會** |  | 112d | 2020-02-03 | 2020-07-15 |
| 430 | 8.1 | **功能清單** |  | 112d | 2020-02-03 | 2020-07-15 |
| 431 | 8.1.1 | **基本建檔維護** |  | 13d | 2020-02-03 | 2020-02-19 |
| 432 | 8.1.1.1 | **發票建檔(PD102)** |  | 5d | 2020-02-03 | 2020-02-07 |
| 433 | 8.1.1.1.1 | 撰寫流程圖 | manual | 4d | 2020-02-03 | 2020-02-06 |
| 434 | 8.1.1.1.2 | 補上Table Schema | manual | 1d | 2020-02-07 | 2020-02-07 |
| 435 | 8.1.1.2 | **客戶建檔(PD103)** |  | 4d | 2020-02-10 | 2020-02-13 |
| 436 | 8.1.1.2.1 | 撰寫流程圖 | manual | 3d | 2020-02-10 | 2020-02-12 |
| 437 | 8.1.1.2.2 | 補上Table Schema | manual | 1d | 2020-02-13 | 2020-02-13 |
| 438 | 8.1.1.3 | **法會前置作業處理(PD109)** |  | 3d | 2020-02-17 | 2020-02-19 |
| 439 | 8.1.1.3.1 | 撰寫流程圖 | manual | 2d | 2020-02-17 | 2020-02-18 |
| 440 | 8.1.1.3.2 | 補上Table Schema | manual | 1d | 2020-02-19 | 2020-02-19 |
| 441 | 8.1.2 | **日常建檔登錄** |  | 51d | 2020-02-21 | 2020-05-07 |
| 442 | 8.1.2.1 | **法會訂購資料登錄(PD201)** |  | 8d | 2020-02-21 | 2020-03-04 |
| 443 | 8.1.2.1.1 | 撰寫流程圖 | manual | 5d | 2020-02-21 | 2020-02-27 |
| 444 | 8.1.2.1.2 | 補上Table Schema | manual | 3d | 2020-03-02 | 2020-03-04 |
| 445 | 8.1.2.2 | **輔銷品訂購資料登錄(PD211)** |  | 4d | 2020-03-05 | 2020-03-10 |
| 446 | 8.1.2.2.1 | 撰寫流程圖 | manual | 3d | 2020-03-05 | 2020-03-09 |
| 447 | 8.1.2.2.2 | 補上Table Schema | manual | 1d | 2020-03-10 | 2020-03-10 |
| 448 | 8.1.2.3 | **展雲代辦資料登錄(PD214)** |  | 4d | 2020-03-11 | 2020-03-16 |
| 449 | 8.1.2.3.1 | 撰寫流程圖 | manual | 3d | 2020-03-11 | 2020-03-13 |
| 450 | 8.1.2.3.2 | 補上Table Schema | manual | 1d | 2020-03-16 | 2020-03-16 |
| 451 | 8.1.2.4 | **車券資料修改(PD224)** |  | 2d | 2020-03-17 | 2020-03-18 |
| 452 | 8.1.2.4.1 | 撰寫流程圖 | manual | 2d | 2020-03-17 | 2020-03-18 |
| 453 | 8.1.2.4.2 | 補上Table Schema | manual | 1d | 2020-03-18 | 2020-03-18 |

| ID | WBS | Task | Type | Duration | Start | Finish |
| --- | --- | --- | --- | --- | --- | --- |
| 454 | 8.1.2.5 | **法會預購資料登錄(PD216)** |  | 5d | 2020-03-19 | 2020-03-25 |
| 455 | 8.1.2.5.1 | 撰寫流程圖 | manual | 4d | 2020-03-19 | 2020-03-24 |
| 456 | 8.1.2.5.2 | 補上Table Schema | manual | 1d | 2020-03-25 | 2020-03-25 |
| 457 | 8.1.2.6 | **往生者資料登錄(PD207)** |  | 5d | 2020-03-26 | 2020-04-01 |
| 458 | 8.1.2.6.1 | 撰寫流程圖 | manual | 4d | 2020-03-26 | 2020-03-31 |
| 459 | 8.1.2.6.2 | 補上Table Schema | manual | 1d | 2020-04-01 | 2020-04-01 |
| 460 | 8.1.2.7 | **聯合祭祀資料登錄(PD215)** |  | 5d | 2020-04-06 | 2020-04-10 |
| 461 | 8.1.2.7.1 | 撰寫流程圖 | manual | 4d | 2020-04-06 | 2020-04-09 |
| 462 | 8.1.2.7.2 | 補上Table Schema | manual | 1d | 2020-04-10 | 2020-04-10 |
| 463 | 8.1.2.8 | **法會蓮位資料登錄(PD203)** |  | 3d | 2020-04-13 | 2020-04-15 |
| 464 | 8.1.2.8.1 | 撰寫流程圖 | manual | 2d | 2020-04-13 | 2020-04-14 |
| 465 | 8.1.2.8.2 | 補上Table Schema | manual | 1d | 2020-04-15 | 2020-04-15 |
| 466 | 8.1.2.9 | **法會供品資料登錄(PD202)** |  | 3d | 2020-04-16 | 2020-04-20 |
| 467 | 8.1.2.9.1 | 撰寫流程圖 | manual | 2d | 2020-04-16 | 2020-04-17 |
| 468 | 8.1.2.9.2 | 補上Table Schema | manual | 1d | 2020-04-20 | 2020-04-20 |
| 469 | 8.1.2.10 | **法會長生祿位資料登錄(PD219)** |  | 3d | 2020-04-21 | 2020-04-23 |
| 470 | 8.1.2.10.1 | 撰寫流程圖 | manual | 2d | 2020-04-21 | 2020-04-22 |
| 471 | 8.1.2.10.2 | 補上Table Schema | manual | 1d | 2020-04-23 | 2020-04-23 |
| 472 | 8.1.2.11 | **法會延壽燈資料登錄(PD220)** |  | 3d | 2020-04-24 | 2020-04-28 |
| 473 | 8.1.2.11.1 | 撰寫流程圖 | manual | 2d | 2020-04-24 | 2020-04-27 |
| 474 | 8.1.2.11.2 | 補上Table Schema | manual | 1d | 2020-04-28 | 2020-04-28 |
| 475 | 8.1.2.12 | **法會功德主蓮位位別資料登錄(PD212)** |  | 3d | 2020-04-29 | 2020-05-04 |
| 476 | 8.1.2.12.1 | 撰寫流程圖 | manual | 2d | 2020-04-29 | 2020-04-30 |
| 477 | 8.1.2.12.2 | 補上Table Schema | manual | 1d | 2020-05-04 | 2020-05-04 |

| ID | WBS | Task | Type | Duration | Start | Finish |
| --- | --- | --- | --- | --- | --- | --- |
| 478 | 8.1.2.13 | **法會收款資料登錄(PD204)** |  | 3d | 2020-05-05 | 2020-05-07 |
| 479 | 8.1.2.13.1 | 撰寫流程圖 | manual | 2d | 2020-05-05 | 2020-05-06 |
| 480 | 8.1.2.13.2 | 補上Table Schema | manual | 1d | 2020-05-07 | 2020-05-07 |
| 481 | 8.1.3 | **查詢** |  | 8d | 2020-05-08 | 2020-05-19 |
| 482 | 8.1.3.1 | **奉厝資料查詢(PD302)** |  | 2d | 2020-05-08 | 2020-05-11 |
| 483 | 8.1.3.1.1 | 撰寫流程圖 | manual | 1d | 2020-05-08 | 2020-05-08 |
| 484 | 8.1.3.1.2 | 補上Table Schema | manual | 1d | 2020-05-11 | 2020-05-11 |
| 485 | 8.1.3.2 | **往生者遷出資料查詢(PD308)** |  | 2d | 2020-05-12 | 2020-05-13 |
| 486 | 8.1.3.2.1 | 撰寫流程圖 | manual | 1d | 2020-05-12 | 2020-05-12 |
| 487 | 8.1.3.2.2 | 補上Table Schema | manual | 1d | 2020-05-13 | 2020-05-13 |
| 488 | 8.1.3.3 | **聯合祭祀資料查詢(PD306)** |  | 2d | 2020-05-14 | 2020-05-15 |
| 489 | 8.1.3.3.1 | 撰寫流程圖 | manual | 1d | 2020-05-14 | 2020-05-14 |
| 490 | 8.1.3.3.2 | 補上Table Schema | manual | 1d | 2020-05-15 | 2020-05-15 |
| 491 | 8.1.3.4 | **法會訂購資料查詢(PD301)** |  | 2d | 2020-05-18 | 2020-05-19 |
| 492 | 8.1.3.4.1 | 撰寫流程圖 | manual | 1d | 2020-05-18 | 2020-05-18 |
| 493 | 8.1.3.4.2 | 補上Table Schema | manual | 1d | 2020-05-19 | 2020-05-19 |
| 494 | 8.1.4 | **日常相關銷售報表** |  | 9d | 2020-05-20 | 2020-06-01 |
| 495 | 8.1.4.1 | **展雲代辦資料明細表(PD449)** |  | 2d | 2020-05-20 | 2020-05-21 |
| 496 | 8.1.4.1.1 | 撰寫流程圖 | manual | 1d | 2020-05-20 | 2020-05-20 |
| 497 | 8.1.4.1.2 | 補上Table Schema | manual | 1d | 2020-05-21 | 2020-05-21 |
| 498 | 8.1.4.2 | **輔銷品訂購資料明細表(PD442)** |  | 2d | 2020-05-22 | 2020-05-25 |
| 499 | 8.1.4.2.1 | 撰寫流程圖 | manual | 1d | 2020-05-22 | 2020-05-22 |
| 500 | 8.1.4.2.2 | 補上Table Schema | manual | 1d | 2020-05-25 | 2020-05-25 |
| 501 | 8.1.4.3 | **每日收入統計表(PD478)** |  | 3d | 2020-05-26 | 2020-05-28 |
| 502 | 8.1.4.3.1 | 撰寫流程圖 | manual | 2d | 2020-05-26 | 2020-05-27 |
| 503 | 8.1.4.3.2 | 補上Table Schema | manual | 1d | 2020-05-28 | 2020-05-28 |

| ID | WBS | Task | Type | Duration | Start | Finish |
| --- | --- | --- | --- | --- | --- | --- |
| 504 | 8.1.4.4 | **法會預購資料明細表(PD464)** |  | 2d | 2020-05-29 | 2020-06-01 |
| 505 | 8.1.4.4.1 | 撰寫流程圖 | manual | 1d | 2020-05-29 | 2020-05-29 |
| 506 | 8.1.4.4.2 | 補上Table Schema | manual | 1d | 2020-06-01 | 2020-06-01 |
| 507 | 8.1.5 | **法會確認函相關報表** |  | 8d | 2020-06-02 | 2020-06-11 |
| 508 | 8.1.5.1 | **確認函列印(PD426)** |  | 2d | 2020-06-02 | 2020-06-03 |
| 509 | 8.1.5.1.1 | 撰寫流程圖 | manual | 1d | 2020-06-02 | 2020-06-02 |
| 510 | 8.1.5.1.2 | 補上Table Schema | manual | 1d | 2020-06-03 | 2020-06-03 |
| 511 | 8.1.5.2 | **電子發票列印(PD460)** |  | 2d | 2020-06-04 | 2020-06-05 |
| 512 | 8.1.5.2.1 | 撰寫流程圖 | manual | 1d | 2020-06-04 | 2020-06-04 |
| 513 | 8.1.5.2.2 | 補上Table Schema | manual | 1d | 2020-06-05 | 2020-06-05 |
| 514 | 8.1.5.3 | **確認函地址標籤列印(PD413)** |  | 2d | 2020-06-08 | 2020-06-09 |
| 515 | 8.1.5.3.1 | 撰寫流程圖 | manual | 1d | 2020-06-08 | 2020-06-08 |
| 516 | 8.1.5.3.2 | 補上Table Schema | manual | 1d | 2020-06-09 | 2020-06-09 |
| 517 | 8.1.5.4 | **記名菩薩領取券列印(PD446)** |  | 2d | 2020-06-10 | 2020-06-11 |
| 518 | 8.1.5.4.1 | 撰寫流程圖 | manual | 1d | 2020-06-10 | 2020-06-10 |
| 519 | 8.1.5.4.2 | 補上Table Schema | manual | 1d | 2020-06-11 | 2020-06-11 |
| 520 | 8.1.6 | **法會相關資料報表** |  | 25d | 2020-06-01 | 2020-07-07 |
| 521 | 8.1.6.1 | **訂購資料明細表(PD418)** |  | 2d | 2020-06-12 | 2020-06-15 |
| 522 | 8.1.6.1.1 | 撰寫流程圖 | manual | 1d | 2020-06-12 | 2020-06-12 |
| 523 | 8.1.6.1.2 | 補上Table Schema | manual | 1d | 2020-06-15 | 2020-06-15 |
| 524 | 8.1.6.2 | **收款資料明細表(PD402)** |  | 2d | 2020-06-16 | 2020-06-17 |
| 525 | 8.1.6.2.1 | 撰寫流程圖 | manual | 1d | 2020-06-16 | 2020-06-16 |
| 526 | 8.1.6.2.2 | 補上Table Schema | manual | 1d | 2020-06-17 | 2020-06-17 |
| 527 | 8.1.6.3 | **功德文牒列印(PD427)** |  | 2d | 2020-06-18 | 2020-06-19 |
| 528 | 8.1.6.3.1 | 撰寫流程圖 | manual | 1d | 2020-06-18 | 2020-06-18 |
| 529 | 8.1.6.3.2 | 補上Table Schema | manual | 1d | 2020-06-19 | 2020-06-19 |

| ID | WBS | Task | Type | Duration | Start | Finish |
| --- | --- | --- | --- | --- | --- | --- |
| 530 | 8.1.6.4 | **往生蓮位/香位列印(PD423)** |  | 2d | 2020-06-22 | 2020-06-23 |
| 531 | 8.1.6.4.1 | 撰寫流程圖 | manual | 1d | 2020-06-22 | 2020-06-22 |
| 532 | 8.1.6.4.2 | 補上Table Schema | manual | 1d | 2020-06-23 | 2020-06-23 |
| 533 | 8.1.6.5 | **車券資料明細表(PD405)** |  | 2d | 2020-06-24 | 2020-06-29 |
| 534 | 8.1.6.5.1 | 撰寫流程圖 | manual | 1d | 2020-06-24 | 2020-06-24 |
| 535 | 8.1.6.5.2 | 補上Table Schema | manual | 1d | 2020-06-29 | 2020-06-29 |
| 536 | 8.1.6.6 | **祭祀資料配置圖(PD429)** |  | 2d | 2020-06-30 | 2020-07-01 |
| 537 | 8.1.6.6.1 | 撰寫流程圖 | manual | 1d | 2020-06-30 | 2020-06-30 |
| 538 | 8.1.6.6.2 | 補上Table Schema | manual | 1d | 2020-07-01 | 2020-07-01 |
| 539 | 8.1.6.7 | **通知函劃撥單列印(PD408)** |  | 2d | 2020-07-02 | 2020-07-03 |
| 540 | 8.1.6.7.1 | 撰寫流程圖 | manual | 1d | 2020-07-02 | 2020-07-02 |
| 541 | 8.1.6.7.2 | 補上Table Schema | manual | 1d | 2020-07-03 | 2020-07-03 |
| 542 | 8.1.6.8 | **通知函客戶地址標籤列印(PD428)** |  | 2d | 2020-07-06 | 2020-07-07 |
| 543 | 8.1.6.8.1 | 撰寫流程圖 | manual | 1d | 2020-07-06 | 2020-07-06 |
| 544 | 8.1.6.8.2 | 補上Table Schema | manual | 1d | 2020-07-07 | 2020-07-07 |
| 545 | 8.1.6.9 | 台哥大通知函簡訊明細列印(PD444)(停用) | manual | 1d | 2020-06-01 | 2020-06-01 |
| 546 | 8.1.7 | **奉厝資料相關報表** |  | 2d | 2020-07-08 | 2020-07-09 |
| 547 | 8.1.7.1 | **往生者使用登記簿(PD434)** |  | 2d | 2020-07-08 | 2020-07-09 |
| 548 | 8.1.7.1.1 | 撰寫流程圖 | manual | 1d | 2020-07-08 | 2020-07-08 |
| 549 | 8.1.7.1.2 | 補上Table Schema | manual | 1d | 2020-07-09 | 2020-07-09 |
| 550 | 8.1.8 | **聯合祭祀相關報表** |  | 4d | 2020-07-10 | 2020-07-15 |
| 551 | 8.1.8.1 | **聯合祭祀牌位列印(PD454)** |  | 2d | 2020-07-10 | 2020-07-13 |
| 552 | 8.1.8.1.1 | 撰寫流程圖 | manual | 1d | 2020-07-10 | 2020-07-10 |
| 553 | 8.1.8.1.2 | 補上Table Schema | manual | 1d | 2020-07-13 | 2020-07-13 |

Notes:
- 545: 停用

| ID | WBS | Task | Type | Duration | Start | Finish |
| --- | --- | --- | --- | --- | --- | --- |
| 554 | 8.1.8.2 | **聯合祭祀功德文牒列印(PD455)** |  | 2d | 2020-07-14 | 2020-07-15 |
| 555 | 8.1.8.2.1 | 撰寫流程圖 | manual | 1d | 2020-07-14 | 2020-07-14 |
| 556 | 8.1.8.2.2 | 補上Table Schema | manual | 1d | 2020-07-15 | 2020-07-15 |
| 557 | 8.2 | **功能清單(待確認)** |  | 1d | 2020-06-01 | 2020-06-01 |
| 558 | 8.2.1 | **基本建檔維護** |  | 1d | 2020-06-01 | 2020-06-01 |
| 559 | 8.2.1.1 | 密碼權限設定(PD101) | manual | 1d | 2020-06-01 | 2020-06-01 |
| 560 | 8.2.1.2 | 法會發票資料異動處理(PD111) | manual | 1d | 2020-06-01 | 2020-06-01 |
| 561 | 8.2.1.3 | 產品資料登錄(PD112) | manual | 1d | 2020-06-01 | 2020-06-01 |
| 562 | 8.2.1.4 | 配置圖資料登錄(PD108) | manual | 1d | 2020-06-01 | 2020-06-01 |
| 563 | 8.2.1.5 | 攺制地址更新處理(PD113) | manual | 1d | 2020-06-01 | 2020-06-01 |
| 564 | 8.2.1.6 | 立薏系統資料匯出處理(PD114) | manual | 1d | 2020-06-01 | 2020-06-01 |
| 565 | 8.2.1.7 | 往生者遷移/正位作業(PD105) | manual | 1d | 2020-06-01 | 2020-06-01 |
| 566 | 8.2.1.8 | 奉厝資料錯誤更正作業(PD104) | manual | 1d | 2020-06-01 | 2020-06-01 |
| 567 | 8.2.2 | **日常建檔登錄** |  | 1d | 2020-06-01 | 2020-06-01 |
| 568 | 8.2.2.1 | 法會訂單資料分割(PD213) | manual | 1d | 2020-06-01 | 2020-06-01 |
| 569 | 8.2.2.2 | 供飯祭祀資料登錄(PD218) | manual | 1d | 2020-06-01 | 2020-06-01 |
| 570 | 8.2.2.3 | 積福供佛資料登錄(PD223) | manual | 1d | 2020-06-01 | 2020-06-01 |
| 571 | 8.2.3 | **查詢** |  | 1d | 2020-06-01 | 2020-06-01 |
| 572 | 8.2.3.1 | 法會訂購資料統計(PD303) | manual | 1d | 2020-06-01 | 2020-06-01 |
| 573 | 8.2.3.2 | 權狀持有人年齡統計分析(PD309) | manual | 1d | 2020-06-01 | 2020-06-01 |
| 574 | 8.2.3.3 | 改制前地址查詢(PD307) | manual | 1d | 2020-06-01 | 2020-06-01 |
| 575 | 8.2.3.4 | 客戶入塔數量統計(PD304) | manual | 1d | 2020-06-01 | 2020-06-01 |
| 576 | 8.2.4 | **法會確認函相關報表** |  | 1d | 2020-06-01 | 2020-06-01 |
| 577 | 8.2.4.1 | 餐券列印(PD411) | manual | 1d | 2020-06-01 | 2020-06-01 |
| 578 | 8.2.4.2 | 車券列印(PD412) | manual | 1d | 2020-06-01 | 2020-06-01 |

Notes:
- 557: 進一步與使用者確認是否有使用
- 559: 未使用
- 560: 未使用
- 561: 未使用
- 562: 未使用
- 563: 未使用
- 564: 移除
- 565: 未使用
- 566: 未使用
- 568: 未使用
- 569: 無作用
- 570: 未使用
- 572: 未使用
- 573: 未使用
- 574: 未使用
- 575: 未使用
- 577: 未使用
- 578: 未使用

| ID | WBS | Task | Type | Duration | Start | Finish |
| --- | --- | --- | --- | --- | --- | --- |
| 579 | 8.2.5 | **法會相關資料報表** |  | 1d | 2020-06-01 | 2020-06-01 |
| 580 | 8.2.5.1 | 客戶訂購資料彙總表(PD401) | manual | 1d | 2020-06-01 | 2020-06-01 |
| 581 | 8.2.5.2 | 法會客戶訂購總清冊(PD448) | manual | 1d | 2020-06-01 | 2020-06-01 |
| 582 | 8.2.5.3 | 超薦名冊列印(PD436) | manual | 1d | 2020-06-01 | 2020-06-01 |
| 583 | 8.2.5.4 | 長生祿位列印(PD476) | manual | 1d | 2020-06-01 | 2020-06-01 |
| 584 | 8.2.5.5 | 記名菩薩領取清冊(PD447) | manual | 1d | 2020-06-01 | 2020-06-01 |
| 585 | 8.2.5.6 | 供花名牌列印(PD438) | manual | 1d | 2020-06-01 | 2020-06-01 |
| 586 | 8.2.5.7 | 延壽燈名牌列印(PD477) | manual | 1d | 2020-06-01 | 2020-06-01 |
| 587 | 8.2.5.8 | 三角旗標籤列印(PD420) | manual | 1d | 2020-06-01 | 2020-06-01 |
| 588 | 8.2.5.9 | 供品標示牌列印(PD452) | manual | 1d | 2020-06-01 | 2020-06-01 |
| 589 | 8.2.5.10 | 供品禮盒標籤列印(PD445) | manual | 1d | 2020-06-01 | 2020-06-01 |
| 590 | 8.2.5.11 | 供品-往生者標籤列印(PD422) | manual | 1d | 2020-06-01 | 2020-06-01 |
| 591 | 8.2.5.12 | 供品-陽上弟子標籤列印(PD421) | manual | 1d | 2020-06-01 | 2020-06-01 |
| 592 | 8.2.5.13 | 車券銷售分析表(PD474) | manual | 1d | 2020-06-01 | 2020-06-01 |
| 593 | 8.2.5.14 | 餐券資料明細表(PD404) | manual | 1d | 2020-06-01 | 2020-06-01 |
| 594 | 8.2.5.15 | 祭祀資料配置資料明細表(PD424) | manual | 1d | 2020-06-01 | 2020-06-01 |
| 595 | 8.2.5.16 | 祭祀資料校核明細表(PD407) | manual | 1d | 2020-06-01 | 2020-06-01 |
| 596 | 8.2.5.17 | 未奉厝蓮位優惠權益明細表(PD470) | manual | 1d | 2020-06-01 | 2020-06-01 |
| 597 | 8.2.5.18 | 法會往生蓮位優惠權益通知函(PD467) | manual | 1d | 2020-06-01 | 2020-06-01 |
| 598 | 8.2.5.19 | 客戶基本資料表-催量(PD425) | manual | 1d | 2020-06-01 | 2020-06-01 |
| 599 | 8.2.6 | **奉厝資料相關報表** |  | 1d | 2020-06-01 | 2020-06-01 |
| 600 | 8.2.6.1 | 備註資料明細表(PD463) | manual | 1d | 2020-06-01 | 2020-06-01 |
| 601 | 8.2.6.2 | 奉厝關懷信函(PD465) | manual | 1d | 2020-06-01 | 2020-06-01 |
| 602 | 8.2.6.3 | 往生者忌日月報表(PD430) | manual | 1d | 2020-06-01 | 2020-06-01 |
| 603 | 8.2.6.4 | 奉厝申請人暨家屬資料明細表(PD473) | manual | 1d | 2020-06-01 | 2020-06-01 |
| 604 | 8.2.6.5 | 奉厝資料明細表(PD453) | manual | 1d | 2020-06-01 | 2020-06-01 |
| 605 | 8.2.6.6 | 往生者文件缺繳明細表(PD443) | manual | 1d | 2020-06-01 | 2020-06-01 |
| 606 | 8.2.6.7 | 往生者資料重複校對表(PD433) | manual | 1d | 2020-06-01 | 2020-06-01 |
| 607 | 8.2.6.8 | 往生者名牌製作資料表(PD435) | manual | 1d | 2020-06-01 | 2020-06-01 |
| 608 | 8.2.6.9 | 往生者資料輸入校對表(PD437) | manual | 1d | 2020-06-01 | 2020-06-01 |
| 609 | 8.2.6.10 | 奉厝資料明細統計表(PD462) | manual | 1d | 2020-06-01 | 2020-06-01 |
| 610 | 8.2.6.11 | 奉厝資料統計表-客戶樓層產品別(PD461) | manual | 1d | 2020-06-01 | 2020-06-01 |

| ID | WBS | Task | Type | Duration | Start | Finish |
| --- | --- | --- | --- | --- | --- | --- |
| 611 | 8.2.7 | **聯合祭祀相關報表** |  | 1d | 2020-06-01 | 2020-06-01 |
| 612 | 8.2.7.1 | 聯合祭祀通知信函(PD466) | manual | 1d | 2020-06-01 | 2020-06-01 |
| 613 | 8.2.7.2 | 聯合祭祀客戶連絡名冊(PD472) | manual | 1d | 2020-06-01 | 2020-06-01 |
| 614 | 8.2.7.3 | 聯合祭祀訂購統計表(PD458) | manual | 1d | 2020-06-01 | 2020-06-01 |
| 615 | 8.2.7.4 | 聯合祭祀業績/獎金統計表(PD468) | manual | 1d | 2020-06-01 | 2020-06-01 |
| 616 | 8.2.7.5 | 聯合祭祀未收款/贈送/優惠資料明細表(PD469) | manual | 1d | 2020-06-01 | 2020-06-01 |
| 617 | 8.2.7.6 | 聯合祭祀供品標示牌列印(PD471) | manual | 1d | 2020-06-01 | 2020-06-01 |
| 618 | 8.2.7.7 | 積福供佛牌位列印(PD483) | manual | 1d | 2020-06-01 | 2020-06-01 |
| 619 | 8.2.7.8 | 供佛消災祈福名冊列印(PD484) | manual | 1d | 2020-06-01 | 2020-06-01 |
| 620 | 8.2.7.9 | 供佛佛像狀況表列印(PD486) | manual | 1d | 2020-06-01 | 2020-06-01 |
| 621 | 8.2.7.10 | 聯合祭祀超薦名冊(PD456) | manual | 1d | 2020-06-01 | 2020-06-01 |
| 622 | 8.2.7.11 | 聯合祭祀超薦名細表(PD457) | manual | 1d | 2020-06-01 | 2020-06-01 |
| 623 | 8.2.7.12 | 聯合祭祀照片/發票地址標籤列印(PD459) | manual | 1d | 2020-06-01 | 2020-06-01 |
| 624 | 9 | **整理新系統(法會)** |  | 10d | 2020-07-20 | 2020-07-31 |
| 625 | 9.1 | 列出必要功能 | manual | 5d | 2020-07-20 | 2020-07-24 |
| 626 | 9.2 | 列出必要操作 | manual | 5d | 2020-07-27 | 2020-07-31 |
| 627 | 10 | **招商** |  | 25d | 2020-06-01 | 2020-07-07 |
| 628 | 10.1 | **廠商會面** |  | 10d | 2020-06-01 | 2020-06-12 |
| 629 | 10.1.1 | 金財通 | manual | 10d | 2020-06-01 | 2020-06-12 |
| 630 | 10.2 | 簽呈,簽訂合約 | manual | 15d | 2020-06-15 | 2020-07-07 |
| 631 | 11 | **廠商開發** |  | 271d | 2020-07-13 | 2021-07-30 |
| 632 | 11.1 | **開發內容談論** |  | 30d | 2020-07-13 | 2020-08-21 |
| 633 | 11.1.1 | **與廠商協商SA內容(塔位契約禮儀法會)** |  | 25d | 2020-07-13 | 2020-08-14 |
| 634 | 11.1.1.1 | 主功能一覽表 | manual | 10d | 2020-07-13 | 2020-07-24 |
| 635 | 11.1.1.2 | 各功能內的操作 | manual | 10d | 2020-07-27 | 2020-08-07 |
| 636 | 11.1.1.3 | TableSchema確認內容 | manual | 20d | 2020-07-13 | 2020-08-07 |
| 637 | 11.1.1.4 | 最後確認SA內容 | manual | 5d | 2020-08-10 | 2020-08-14 |

Notes:
- 625: 功能應該要有哪些操作繼續保留
- 626: 功能應該要有哪些操作繼續保留

| ID | WBS | Task | Type | Duration | Start | Finish |
| --- | --- | --- | --- | --- | --- | --- |
| 638 | 11.1.2 | **UI畫面指定** |  | 12d | 2020-07-13 | 2020-07-28 |
| 639 | 11.1.2.1 | 廠商確認能製作 | manual | 5d | 2020-07-13 | 2020-07-17 |
| 640 | 11.1.2.2 | 詢問使用者意見 | manual | 7d | 2020-07-20 | 2020-07-28 |
| 641 | 11.1.3 | **第一次合作(基本資料)** |  | 15d | 2020-08-03 | 2020-08-21 |
| 642 | 11.1.3.1 | 初版畫面確認 | manual | 5d | 2020-08-03 | 2020-08-07 |
| 643 | 11.1.3.2 | 初版程式撰寫 | manual | 5d | 2020-08-10 | 2020-08-14 |
| 644 | 11.1.3.3 | 第一版文件規格確認 | manual | 3d | 2020-08-17 | 2020-08-19 |
| 645 | 11.1.3.4 | 確認第一次合作方式 | manual | 5d | 2020-08-17 | 2020-08-21 |
| 646 | 11.2 | **塔位系統開發** |  | 80d | 2020-08-24 | 2020-12-16 |
| 647 | 11.2.1 | 正式開發 | manual | 40d | 2020-08-24 | 2020-10-21 |
| 648 | 11.2.2 | 內部測試 | manual | 20d | 2020-09-21 | 2020-10-21 |
| 649 | 11.2.3 | 外部測試 | manual | 20d | 2020-10-22 | 2020-11-18 |
| 650 | 11.2.4 | 程式教學 | manual | 20d | 2020-11-19 | 2020-12-16 |
| 651 | 11.3 | **契約系統開發** |  | 82d | 2020-10-22 | 2021-02-15 |
| 652 | 11.3.1 | 正式開發 | manual | 40d | 2020-10-22 | 2020-12-16 |
| 653 | 11.3.2 | 內部測試 | manual | 20d | 2020-11-23 | 2020-12-18 |
| 654 | 11.3.3 | 外部測試 | manual | 20d | 2020-12-21 | 2021-01-18 |
| 655 | 11.3.4 | 程式教學 | manual | 20d | 2021-01-19 | 2021-02-15 |
| 656 | 11.4 | **禮儀系統開發** |  | 50d | 2020-12-21 | 2021-03-01 |
| 657 | 11.4.1 | 正式開發 | manual | 20d | 2020-12-21 | 2021-01-18 |
| 658 | 11.4.2 | 內部測試 | manual | 10d | 2021-01-19 | 2021-02-01 |
| 659 | 11.4.3 | 外部測試 | manual | 10d | 2021-02-02 | 2021-02-15 |
| 660 | 11.4.4 | 程式教學 | manual | 10d | 2021-02-16 | 2021-03-01 |
| 661 | 11.5 | **法會系統開發** |  | 130d | 2021-02-01 | 2021-07-30 |
| 662 | 11.5.1 | 正式開發 | manual | 70d | 2021-02-01 | 2021-05-07 |
| 663 | 11.5.2 | 內部測試 | manual | 50d | 2021-03-01 | 2021-05-07 |
| 664 | 11.5.3 | 外部測試 | manual | 30d | 2021-05-10 | 2021-06-18 |
| 665 | 11.5.4 | 程式教學 | manual | 30d | 2021-06-21 | 2021-07-30 |

Notes:
- 645: 與使用者確認內容
- 647: 資訊部內部測試 / 每月一次
- 649: 資訊部內部測試 / 每月一次
- 652: 資訊部內部測試 / 每月一次
- 653: 資訊部內部測試 / 每月一次
- 654: 資訊部內部測試 / 每月一次
- 657: 資訊部內部測試 / 每月一次
- 659: 資訊部內部測試 / 每月一次
- 662: 資訊部內部測試 / 每月一次
- 664: 資訊部內部測試 / 每月一次

| ID | WBS | Task | Type | Duration | Start | Finish |
| --- | --- | --- | --- | --- | --- | --- |
| 666 | 12 | **硬體** |  | 74d | 2020-07-13 | 2020-10-27 |
| 667 | 12.1 | 需求討論(軟體商) | manual | 3d | 2020-07-13 | 2020-07-15 |
| 668 | 12.2 | 規格開立(軟體商) | manual | 3d | 2020-07-16 | 2020-07-20 |
| 669 | 12.3 | 廠商報價 | manual | 7d | 2020-07-21 | 2020-07-29 |
| 670 | 12.4 | 簽呈撰寫 | manual | 2d | 2020-07-30 | 2020-07-31 |
| 671 | 12.5 | 採購 | manual | 5d | 2020-08-03 | 2020-08-07 |
| 672 | 12.6 | 交機 | manual | 45d | 2020-08-10 | 2020-10-14 |
| 673 | 12.7 | 驗收(資訊,軟體商) | manual | 2d | 2020-10-15 | 2020-10-16 |
| 674 | 12.8 | 系統建置(資訊,軟體商) | manual | 7d | 2020-10-19 | 2020-10-27 |
