Schedule from GanttProject, 2019-12-02 to 2021-07-30.
展雲-管理處-資訊部
Holidays every year on 01-01, 02-28, 04-04, 05-01, 10-10

## Calendars

- Project calendar: Mon-Fri working; Sat-Sun off. Exceptions (off unless hours are given): 2020-01-23 (休假), 2020-01-24 (除夕), 2020-01-27 (初三), 2020-01-28 (初四), 2020-01-29 (初五), 2020-04-02 to 2020-04-03 (清明兒童節連假), 2020-06-25 (端午節), 2020-06-26 (端午節連假), 2020-10-01 (中秋節), 2020-10-02 (中秋節連假), 2020-10-09 (??).

## Schedule

| ID | WBS | Task | Duration | Start | Finish | Complete | 實際完成 |
| --- | --- | --- | --- | --- | --- | --- | --- |
| 1 | 1 | **塔位** | 39d | 2020-02-03 | 2020-03-27 | 35% |  |
| 2 | 1.1 | **功能整理** | 3d | 2020-02-03 | 2020-02-05 | 33% |  |
| 3 | 1.1.1 | 列出主要功能 | 1d | 2020-02-03 | 2020-02-03 | 100% |  |
| 4 | 1.1.2 | 整理TableSchema大項目 | 2d | 2020-02-04 | 2020-02-05 |  |  |
| 5 | 1.2 | **功能清單** | 36d | 2020-02-06 | 2020-03-27 | 36% |  |
| 6 | 1.2.1 | **基本資料設定** | 2d | 2020-02-06 | 2020-02-07 | 100% | 2020-02-07T00:00:00.00Z |
| 7 | 1.2.1.1 | **密碼權限設定(JW101)** | 1d | 2020-02-06 | 2020-02-06 | 100% | 2020-02-06T00:00:00.00Z |
| 8 | 1.2.1.1.1 | 撰寫流程圖 | 1d | 2020-02-06 | 2020-02-06 | 100% |  |
| 9 | 1.2.1.1.2 | 補上TableSchema | 1d | 2020-02-06 | 2020-02-06 | 100% |  |
| 10 | 1.2.1.2 | **銀行代號設定(JW102)** | 1d | 2020-02-06 | 2020-02-06 | 100% | 2020-02-06T00:00:00.00Z |
| 11 | 1.2.1.2.1 | 撰寫流程圖 | 1d | 2020-02-06 | 2020-02-06 | 100% |  |
| 12 | 1.2.1.2.2 | 補上TableSchema | 1d | 2020-02-06 | 2020-02-06 | 100% |  |
| 13 | 1.2.1.3 | **產品代號設定(JW103)** | 1d | 2020-02-07 | 2020-02-07 | 100% | 2020-02-07T00:00:00.00Z |
| 14 | 1.2.1.3.1 | 撰寫流程圖 | 1d | 2020-02-07 | 2020-02-07 | 100% |  |
| 15 | 1.2.1.3.2 | 補上TableSchema | 1d | 2020-02-07 | 2020-02-07 | 100% |  |
| 16 | 1.2.1.4 | **國別代號設定(JW104)** | 1d | 2020-02-07 | 2020-02-07 | 100% | 2020-02-07T00:00:00.00Z |
| 17 | 1.2.1.4.1 | 撰寫流程圖 | 1d | 2020-02-07 | 2020-02-07 | 100% |  |
| 18 | 1.2.1.4.2 | 補上TableSchema | 1d | 2020-02-07 | 2020-02-07 | 100% |  |
| 19 | 1.2.1.5 | **契約類別代號設定(JW116)** | 1d | 2020-02-07 | 2020-02-07 | 100% | 2020-02-07T00:00:00.00Z |
| 20 | 1.2.1.5.1 | 撰寫流程圖 | 1d | 2020-02-07 | 2020-02-07 | 100% |  |
| 21 | 1.2.1.5.2 | 補上TableSchema | 1d | 2020-02-07 | 2020-02-07 | 100% |  |
| 22 | 1.2.2 | **業務員相關功能** | 2d | 2020-02-10 | 2020-02-11 | 100% | 2020-02-11T00:00:00.00Z |
| 23 | 1.2.2.1 | **業務員建檔(JW109)** | 1d | 2020-02-10 | 2020-02-10 | 100% | 2020-02-10T00:00:00.00Z |
| 24 | 1.2.2.1.1 | 撰寫流程圖 | 1d | 2020-02-10 | 2020-02-10 | 100% |  |
| 25 | 1.2.2.1.2 | 補上TableSchema | 1d | 2020-02-10 | 2020-02-10 | 100% |  |

| ID | WBS | Task | Duration | Start | Finish | Complete | 實際完成 |
| --- | --- | --- | --- | --- | --- | --- | --- |
| 26 | 1.2.2.2 | **業務員明細表(JW413)** | 2d | 2020-02-10 | 2020-02-11 | 100% | 2020-02-11T00:00:00.00Z |
| 27 | 1.2.2.2.1 | 撰寫流程圖 | 2d | 2020-02-10 | 2020-02-11 | 100% |  |
| 28 | 1.2.2.2.2 | 補上TableSchema | 1d | 2020-02-11 | 2020-02-11 | 100% |  |
| 29 | 1.2.3 | **信用卡相關功能** | 1d | 2020-02-12 | 2020-02-12 | 100% | 2020-02-12T00:00:00.00Z |
| 30 | 1.2.3.1 | **信用卡基本資料登錄(JW117)** | 1d | 2020-02-12 | 2020-02-12 | 100% | 2020-02-12T00:00:00.00Z |
| 31 | 1.2.3.1.1 | 撰寫流程圖 | 1d | 2020-02-12 | 2020-02-12 | 100% |  |
| 32 | 1.2.3.1.2 | 補上TableSchema | 1d | 2020-02-12 | 2020-02-12 | 100% |  |
| 33 | 1.2.4 | **轉入轉出功能** | 2d | 2020-02-13 | 2020-02-14 | 100% | 2020-02-17T00:00:00.00Z |
| 34 | 1.2.4.1 | **郵局代收資料匯入(JW213)** | 1d | 2020-02-13 | 2020-02-13 | 100% | 2020-02-17T00:00:00.00Z |
| 35 | 1.2.4.1.1 | 撰寫流程圖 | 1d | 2020-02-13 | 2020-02-13 | 100% |  |
| 36 | 1.2.4.1.2 | 補上TableSchema | 1d | 2020-02-13 | 2020-02-13 | 100% |  |
| 37 | 1.2.4.2 | **郵局代收資料匯出(JW211)** | 2d | 2020-02-13 | 2020-02-14 | 100% | 2020-02-17T00:00:00.00Z |
| 38 | 1.2.4.2.1 | 撰寫流程圖 | 2d | 2020-02-13 | 2020-02-14 | 100% |  |
| 39 | 1.2.4.2.2 | 補上TableSchema | 1d | 2020-02-14 | 2020-02-14 | 100% |  |
| 40 | 1.2.5 | **選位作業功能相關** | 6d | 2020-02-19 | 2020-02-26 | 100% | 2020-02-24T00:00:00.00Z |
| 41 | 1.2.5.1 | **樓層代號設定(JW105)** | 2d | 2020-02-19 | 2020-02-20 | 100% | 2020-02-19T00:00:00.00Z |
| 42 | 1.2.5.1.1 | 撰寫流程圖 | 2d | 2020-02-19 | 2020-02-20 | 100% | 2020-02-19T00:00:00.00Z |
| 43 | 1.2.5.1.2 | 補上TableSchema | 1d | 2020-02-20 | 2020-02-20 | 100% | 2020-02-19T00:00:00.00Z |
| 44 | 1.2.5.2 | **區域代號設定(JW106)** | 1d | 2020-02-20 | 2020-02-20 | 100% | 2020-02-20T00:00:00.00Z |
| 45 | 1.2.5.2.1 | 撰寫流程圖 | 1d | 2020-02-20 | 2020-02-20 | 100% | 2020-02-20T00:00:00.00Z |
| 46 | 1.2.5.2.2 | 補上TableSchema | 1d | 2020-02-20 | 2020-02-20 | 100% | 2020-02-20T00:00:00.00Z |
| 47 | 1.2.5.3 | **棟別代號設定(JW114)** | 1d | 2020-02-20 | 2020-02-20 | 100% | 2020-02-20T00:00:00.00Z |
| 48 | 1.2.5.3.1 | 撰寫流程圖 | 1d | 2020-02-20 | 2020-02-20 | 100% | 2020-02-20T00:00:00.00Z |
| 49 | 1.2.5.3.2 | 補上TableSchema | 1d | 2020-02-20 | 2020-02-20 | 100% | 2020-02-20T00:00:00.00Z |

| ID | WBS | Task | Duration | Start | Finish | Complete | 實際完成 |
| --- | --- | --- | --- | --- | --- | --- | --- |
| 50 | 1.2.5.4 | **樓層區域單位建檔(JW108)** | 1d | 2020-02-21 | 2020-02-21 | 100% | 2020-02-20T00:00:00.00Z |
| 51 | 1.2.5.4.1 | 撰寫流程圖 | 1d | 2020-02-21 | 2020-02-21 | 100% | 2020-02-20T00:00:00.00Z |
| 52 | 1.2.5.4.2 | 補上TableSchema | 1d | 2020-02-21 | 2020-02-21 | 100% | 2020-02-20T00:00:00.00Z |
| 53 | 1.2.5.5 | **選位作業(JW206)** | 1d | 2020-02-21 | 2020-02-21 | 100% | 2020-02-20T00:00:00.00Z |
| 54 | 1.2.5.5.1 | 撰寫流程圖 | 1d | 2020-02-21 | 2020-02-21 | 100% | 2020-02-21T00:00:00.00Z |
| 55 | 1.2.5.5.2 | 補上TableSchema | 1d | 2020-02-21 | 2020-02-21 | 100% | 2020-02-21T00:00:00.00Z |
| 56 | 1.2.5.6 | **鎖位作業(JW214)** | 1d | 2020-02-24 | 2020-02-24 | 100% | 2020-02-24T00:00:00.00Z |
| 57 | 1.2.5.6.1 | 撰寫流程圖 | 1d | 2020-02-24 | 2020-02-24 | 100% | 2020-02-24T00:00:00.00Z |
| 58 | 1.2.5.6.2 | 補上TableSchema | 1d | 2020-02-24 | 2020-02-24 | 100% | 2020-02-24T00:00:00.00Z |
| 59 | 1.2.5.7 | **塔位樓層圖查詢(W_JW301)** | 2d | 2020-02-25 | 2020-02-26 | 100% | 2020-02-24T00:00:00.00Z |
| 60 | 1.2.5.7.1 | 撰寫流程圖 | 2d | 2020-02-25 | 2020-02-26 | 100% | 2020-02-24T00:00:00.00Z |
| 61 | 1.2.5.7.2 | 補上TableSchema | 2d | 2020-02-25 | 2020-02-26 | 100% | 2020-02-24T00:00:00.00Z |
| 62 | 1.2.5.8 | **樓層單位查詢(JW302)** | 1d | 2020-02-26 | 2020-02-26 | 100% | 2020-02-24T00:00:00.00Z |
| 63 | 1.2.5.8.1 | 撰寫流程圖 | 1d | 2020-02-26 | 2020-02-26 | 100% | 2020-02-24T00:00:00.00Z |
| 64 | 1.2.5.8.2 | 補上TableSchema | 1d | 2020-02-26 | 2020-02-26 | 100% | 2020-02-24T00:00:00.00Z |
| 65 | 1.2.6 | **權狀功能相關** | 7d | 2020-02-27 | 2020-03-09 | 100% | 2020-03-31T00:00:00.00Z |
| 66 | 1.2.6.1 | **權狀明細表(JW419)** | 1d | 2020-02-27 | 2020-02-27 | 100% | 2020-02-26T00:00:00.00Z |
| 67 | 1.2.6.1.1 | 撰寫流程圖 | 1d | 2020-02-27 | 2020-02-27 | 100% | 2020-02-26T00:00:00.00Z |
| 68 | 1.2.6.1.2 | 補上TableSchema | 1d | 2020-02-27 | 2020-02-27 | 100% | 2020-02-26T00:00:00.00Z |
| 69 | 1.2.6.2 | **權狀異動作業(JW112)** | 1d | 2020-03-02 | 2020-03-02 | 100% | 2020-03-03T00:00:00.00Z |
| 70 | 1.2.6.2.1 | 撰寫流程圖 | 1d | 2020-03-02 | 2020-03-02 | 100% | 2020-03-03T00:00:00.00Z |
| 71 | 1.2.6.2.2 | 補上TableSchema | 1d | 2020-03-02 | 2020-03-02 | 100% | 2020-03-03T00:00:00.00Z |
| 72 | 1.2.6.3 | **權狀合併作業(JW121)** | 4d | 2020-03-03 | 2020-03-06 | 100% | 2020-03-16T00:00:00.00Z |
| 73 | 1.2.6.3.1 | 撰寫流程圖 | 1d | 2020-03-03 | 2020-03-03 | 100% | 2020-03-16T00:00:00.00Z |
| 74 | 1.2.6.3.2 | 補上TableSchema | 1d | 2020-03-06 | 2020-03-06 | 100% | 2020-03-16T00:00:00.00Z |

| ID | WBS | Task | Duration | Start | Finish | Complete | 實際完成 |
| --- | --- | --- | --- | --- | --- | --- | --- |
| 75 | 1.2.6.4 | **永久使用權狀列印(JW402)** | 1d | 2020-03-04 | 2020-03-04 | 100% | 2020-03-18T00:00:00.00Z |
| 76 | 1.2.6.4.1 | 撰寫流程圖 | 1d | 2020-03-04 | 2020-03-04 | 100% | 2020-03-18T00:00:00.00Z |
| 77 | 1.2.6.4.2 | 補上TableSchema | 1d | 2020-03-04 | 2020-03-04 | 100% | 2020-03-16T00:00:00.00Z |
| 78 | 1.2.6.5 | **永久使用權狀換發憑證列印(JW426)** | 2d | 2020-03-04 | 2020-03-05 | 100% | 2020-03-20T00:00:00.00Z |
| 79 | 1.2.6.5.1 | 撰寫流程圖 | 2d | 2020-03-04 | 2020-03-05 | 100% | 2020-03-20T00:00:00.00Z |
| 80 | 1.2.6.5.2 | 補上TableSchema | 1d | 2020-03-05 | 2020-03-05 | 100% | 2020-03-20T00:00:00.00Z |
| 81 | 1.2.6.6 | **捐贈區資料登錄(JW203)** | 2d | 2020-03-06 | 2020-03-09 | 100% | 2020-03-31T00:00:00.00Z |
| 82 | 1.2.6.6.1 | 撰寫流程圖 | 2d | 2020-03-06 | 2020-03-09 | 100% | 2020-03-31T00:00:00.00Z |
| 83 | 1.2.6.6.2 | 補上TableSchema | 1d | 2020-03-06 | 2020-03-06 | 100% | 2020-03-31T00:00:00.00Z |
| 84 | 1.2.7 | **發票相關功能** | 12d | 2020-02-06 | 2020-02-21 |  |  |
| 85 | 1.2.7.1 | **發票建檔(JW107)** | 3d | 2020-02-06 | 2020-02-10 |  |  |
| 86 | 1.2.7.1.1 | 撰寫流程圖 | 3d | 2020-02-06 | 2020-02-10 |  |  |
| 87 | 1.2.7.1.2 | 補上TableSchema | 1d | 2020-02-10 | 2020-02-10 |  |  |
| 88 | 1.2.7.2 | **發票開立作業(JW204)** | 5d | 2020-02-11 | 2020-02-17 |  |  |
| 89 | 1.2.7.2.1 | 撰寫流程圖 | 5d | 2020-02-11 | 2020-02-17 |  |  |
| 90 | 1.2.7.2.2 | 補上TableSchema | 5d | 2020-02-11 | 2020-02-17 |  |  |
| 91 | 1.2.7.3 | **發票開立作業-非契約件(JW209)** | 3d | 2020-02-18 | 2020-02-20 |  |  |
| 92 | 1.2.7.3.1 | 撰寫流程圖 | 3d | 2020-02-18 | 2020-02-20 |  |  |
| 93 | 1.2.7.3.2 | 補上TableSchema | 3d | 2020-02-18 | 2020-02-20 |  |  |
| 94 | 1.2.7.4 | **電子發票列印(JW437)** | 1d | 2020-02-21 | 2020-02-21 |  |  |
| 95 | 1.2.7.4.1 | 撰寫流程圖 | 1d | 2020-02-21 | 2020-02-21 |  |  |
| 96 | 1.2.7.4.2 | 補上TableSchema | 1d | 2020-02-21 | 2020-02-21 |  |  |
| 97 | 1.2.7.5 | **銷退明細表(JW441)** | 1d | 2020-02-21 | 2020-02-21 |  |  |
| 98 | 1.2.7.5.1 | 撰寫流程圖 | 1d | 2020-02-21 | 2020-02-21 |  |  |
| 99 | 1.2.7.5.2 | 補上TableSchema | 1d | 2020-02-21 | 2020-02-21 |  |  |

| ID | WBS | Task | Duration | Start | Finish |
| --- | --- | --- | --- | --- | --- |
| 100 | 1.2.8 | **客戶功能相關** | 15d | 2020-02-24 | 2020-03-16 |
| 101 | 1.2.8.1 | **客戶建檔(JW111)** | 1d | 2020-02-24 | 2020-02-24 |
| 102 | 1.2.8.1.1 | 撰寫流程圖 | 1d | 2020-02-24 | 2020-02-24 |
| 103 | 1.2.8.1.2 | 補上TableSchema | 1d | 2020-02-24 | 2020-02-24 |
| 104 | 1.2.8.2 | **預購客戶資料登錄** | 7d | 2020-02-25 | 2020-03-05 |
| 105 | 1.2.8.2.1 | 撰寫流程圖 | 7d | 2020-02-25 | 2020-03-05 |
| 106 | 1.2.8.2.2 | 補上TableSchema | 1d | 2020-03-05 | 2020-03-05 |
| 107 | 1.2.8.3 | **尊貴卡資料建檔(JW118)** | 1d | 2020-03-06 | 2020-03-06 |
| 108 | 1.2.8.3.1 | 撰寫流程圖 | 1d | 2020-03-06 | 2020-03-06 |
| 109 | 1.2.8.3.2 | 補上TableSchema | 1d | 2020-03-06 | 2020-03-06 |
| 110 | 1.2.8.4 | **贈蓮專案客戶資料建檔(JW122)** | 1d | 2020-03-09 | 2020-03-09 |
| 111 | 1.2.8.4.1 | 撰寫流程圖 | 1d | 2020-03-09 | 2020-03-09 |
| 112 | 1.2.8.4.2 | 補上TableSchema | 1d | 2020-03-09 | 2020-03-09 |
| 113 | 1.2.8.5 | **客戶明細表(JW416)** | 1d | 2020-03-09 | 2020-03-09 |
| 114 | 1.2.8.5.1 | 撰寫流程圖 | 1d | 2020-03-09 | 2020-03-09 |
| 115 | 1.2.8.5.2 | 補上TableSchema | 1d | 2020-03-09 | 2020-03-09 |
| 116 | 1.2.8.6 | **客戶資料列印(JW403)** | 1d | 2020-03-10 | 2020-03-10 |
| 117 | 1.2.8.6.1 | 撰寫流程圖 | 1d | 2020-03-10 | 2020-03-10 |
| 118 | 1.2.8.6.2 | 補上TableSchema | 1d | 2020-03-10 | 2020-03-10 |
| 119 | 1.2.8.7 | **客戶選位資料表(JW421)** | 1d | 2020-03-11 | 2020-03-11 |
| 120 | 1.2.8.7.1 | 撰寫流程圖 | 1d | 2020-03-11 | 2020-03-11 |
| 121 | 1.2.8.7.2 | 補上TableSchema | 1d | 2020-03-11 | 2020-03-11 |
| 122 | 1.2.8.8 | **客戶選位異動資料表(JW442)** | 1d | 2020-03-11 | 2020-03-11 |
| 123 | 1.2.8.8.1 | 撰寫流程圖 | 1d | 2020-03-11 | 2020-03-11 |
| 124 | 1.2.8.8.2 | 補上TableSchema | 1d | 2020-03-11 | 2020-03-11 |

| ID | WBS | Task | Duration | Start | Finish |
| --- | --- | --- | --- | --- | --- |
| 125 | 1.2.8.9 | **客戶資料權狀列印(JW404)** | 1d | 2020-03-12 | 2020-03-12 |
| 126 | 1.2.8.9.1 | 撰寫流程圖 | 1d | 2020-03-12 | 2020-03-12 |
| 127 | 1.2.8.9.2 | 補上TableSchema | 1d | 2020-03-12 | 2020-03-12 |
| 128 | 1.2.8.10 | **客戶郵寄發票地址列印(JW448)** | 1d | 2020-03-12 | 2020-03-12 |
| 129 | 1.2.8.10.1 | 撰寫流程圖 | 1d | 2020-03-12 | 2020-03-12 |
| 130 | 1.2.8.10.2 | 補上TableSchema | 1d | 2020-03-12 | 2020-03-12 |
| 131 | 1.2.8.11 | **客戶尊貴卡郵寄地址列印(JW449)** | 1d | 2020-03-13 | 2020-03-13 |
| 132 | 1.2.8.11.1 | 撰寫流程圖 | 1d | 2020-03-13 | 2020-03-13 |
| 133 | 1.2.8.11.2 | 補上TableSchema | 1d | 2020-03-13 | 2020-03-13 |
| 134 | 1.2.8.12 | **未點交客戶資料明細表(JW425)** | 1d | 2020-03-13 | 2020-03-13 |
| 135 | 1.2.8.12.1 | 撰寫流程圖 | 1d | 2020-03-13 | 2020-03-13 |
| 136 | 1.2.8.12.2 | 補上TableSchema | 1d | 2020-03-13 | 2020-03-13 |
| 137 | 1.2.8.13 | **客戶異動資料表(JW453)** | 1d | 2020-03-16 | 2020-03-16 |
| 138 | 1.2.8.13.1 | 撰寫流程圖 | 1d | 2020-03-16 | 2020-03-16 |
| 139 | 1.2.8.13.2 | 補上TableSchema | 1d | 2020-03-16 | 2020-03-16 |
| 140 | 1.2.8.14 | **臨時性報表-客戶郵寄地址列印(JW452)** | 1d | 2020-03-16 | 2020-03-16 |
| 141 | 1.2.8.14.1 | 撰寫流程圖 | 1d | 2020-03-16 | 2020-03-16 |
| 142 | 1.2.8.14.2 | 補上TableSchema | 1d | 2020-03-16 | 2020-03-16 |
| 143 | 1.2.9 | **經銷商相關功能** | 3d | 2020-03-18 | 2020-03-20 |
| 144 | 1.2.9.1 | **經銷商建檔(JW110)** | 1d | 2020-03-18 | 2020-03-18 |
| 145 | 1.2.9.1.1 | 撰寫流程圖 | 1d | 2020-03-18 | 2020-03-18 |
| 146 | 1.2.9.1.2 | 補上TableSchema | 1d | 2020-03-18 | 2020-03-18 |
| 147 | 1.2.9.2 | **經銷商專案登錄(JW201)** | 2d | 2020-03-18 | 2020-03-19 |
| 148 | 1.2.9.2.1 | 撰寫流程圖 | 2d | 2020-03-18 | 2020-03-19 |
| 149 | 1.2.9.2.2 | 補上TableSchema | 1d | 2020-03-19 | 2020-03-19 |

| ID | WBS | Task | Duration | Start | Finish |
| --- | --- | --- | --- | --- | --- |
| 150 | 1.2.9.3 | **經銷商合約資料轉入(JW205)** | 1d | 2020-03-20 | 2020-03-20 |
| 151 | 1.2.9.3.1 | 撰寫流程圖 | 1d | 2020-03-20 | 2020-03-20 |
| 152 | 1.2.9.3.2 | 補上TableSchema | 1d | 2020-03-20 | 2020-03-20 |
| 153 | 1.2.10 | **收款匯款相關功能** | 5d | 2020-03-23 | 2020-03-27 |
| 154 | 1.2.10.1 | **收款性質代號設定(JW115)** | 1d | 2020-03-23 | 2020-03-23 |
| 155 | 1.2.10.1.1 | 撰寫流程圖 | 1d | 2020-03-23 | 2020-03-23 |
| 156 | 1.2.10.1.2 | 補上TableSchema | 1d | 2020-03-23 | 2020-03-23 |
| 157 | 1.2.10.2 | **收款單(JW405)** | 2d | 2020-03-23 | 2020-03-24 |
| 158 | 1.2.10.2.1 | 撰寫流程圖 | 2d | 2020-03-23 | 2020-03-24 |
| 159 | 1.2.10.2.2 | 補上TableSchema | 1d | 2020-03-24 | 2020-03-24 |
| 160 | 1.2.10.3 | **收款單-非契約件(JW434)** | 2d | 2020-03-24 | 2020-03-25 |
| 161 | 1.2.10.3.1 | 撰寫流程圖 | 2d | 2020-03-24 | 2020-03-25 |
| 162 | 1.2.10.3.2 | 補上TableSchema | 1d | 2020-03-25 | 2020-03-25 |
| 163 | 1.2.10.4 | **分期資料明細表-業務部(JW432)** | 1d | 2020-03-26 | 2020-03-26 |
| 164 | 1.2.10.4.1 | 撰寫流程圖 | 1d | 2020-03-26 | 2020-03-26 |
| 165 | 1.2.10.4.2 | 補上TableSchema | 1d | 2020-03-26 | 2020-03-26 |
| 166 | 1.2.10.5 | **分期繳款資料明細表(JW433)** | 1d | 2020-03-26 | 2020-03-26 |
| 167 | 1.2.10.5.1 | 撰寫流程圖 | 1d | 2020-03-26 | 2020-03-26 |
| 168 | 1.2.10.5.2 | 補上TableSchema | 1d | 2020-03-26 | 2020-03-26 |
| 169 | 1.2.10.6 | **匯款劃撥單列印(JW436)** | 1d | 2020-03-27 | 2020-03-27 |
| 170 | 1.2.10.6.1 | 撰寫流程圖 | 1d | 2020-03-27 | 2020-03-27 |
| 171 | 1.2.10.6.2 | 補上TableSchema | 1d | 2020-03-27 | 2020-03-27 |
| 172 | 1.2.10.7 | **違約金預估明細表(JW440)** | 1d | 2020-03-27 | 2020-03-27 |
| 173 | 1.2.10.7.1 | 撰寫流程圖 | 1d | 2020-03-27 | 2020-03-27 |
| 174 | 1.2.10.7.2 | 補上TableSchema | 1d | 2020-03-27 | 2020-03-27 |

| ID | WBS | Task | Duration | Start | Finish | Complete | 實際完成 |
| --- | --- | --- | --- | --- | --- | --- | --- |
| 175 | 2 | **契約** | 29d | 2020-03-26 | 2020-05-08 | 25% |  |
| 176 | 2.1 | **功能整理** | 2d | 2020-03-26 | 2020-03-27 | 100% | 2020-02-25T00:00:00.00Z |
| 177 | 2.1.1 | 列出主要功能 | 1d | 2020-03-26 | 2020-03-26 | 100% | 2020-02-11T00:00:00.00Z |
| 178 | 2.1.2 | 整理Table Schema大項目 | 1d | 2020-03-27 | 2020-03-27 | 100% | 2020-02-25T00:00:00.00Z |
| 179 | 2.2 | **功能清單** | 28d | 2020-03-27 | 2020-05-08 | 20% |  |
| 180 | 2.2.1 | **契約相關功能** | 5d | 2020-03-27 | 2020-04-06 |  |  |
| 181 | 2.2.1.1 | **幸福契約資料登錄(CF202)** | 5d | 2020-03-27 | 2020-04-06 |  |  |
| 182 | 2.2.1.1.1 | 撰寫流程圖 | 5d | 2020-03-27 | 2020-04-06 |  |  |
| 183 | 2.2.1.1.2 | 補上TableSchema | 1d | 2020-04-06 | 2020-04-06 |  |  |
| 184 | 2.2.1.2 | **契約過戶作業(CF211)** | 1d | 2020-04-06 | 2020-04-06 |  |  |
| 185 | 2.2.1.2.1 | 補上TableSchema | 1d | 2020-04-06 | 2020-04-06 |  |  |
| 186 | 2.2.1.2.2 | 撰寫流程圖 | 1d | 2020-04-06 | 2020-04-06 |  |  |
| 187 | 2.2.1.3 | **契約資料明細表(CF418)** | 1d | 2020-04-06 | 2020-04-06 |  |  |
| 188 | 2.2.1.3.1 | 補上TableSchema | 1d | 2020-04-06 | 2020-04-06 |  |  |
| 189 | 2.2.1.3.2 | 撰寫流程圖 | 1d | 2020-04-06 | 2020-04-06 |  |  |
| 190 | 2.2.1.4 | **有效契約月報表-發票日(CF433)** | 1d | 2020-04-06 | 2020-04-06 |  |  |
| 191 | 2.2.1.4.1 | 補上TableSchema | 1d | 2020-04-06 | 2020-04-06 |  |  |
| 192 | 2.2.1.4.2 | 撰寫流程圖 | 1d | 2020-04-06 | 2020-04-06 |  |  |
| 193 | 2.2.1.5 | **有效契約月報表-簽約日(CF444)** | 1d | 2020-04-06 | 2020-04-06 |  |  |
| 194 | 2.2.1.5.1 | 補上TableSchema | 1d | 2020-04-06 | 2020-04-06 |  |  |
| 195 | 2.2.1.5.2 | 撰寫流程圖 | 1d | 2020-04-06 | 2020-04-06 |  |  |
| 196 | 2.2.1.6 | **契約銷退通知明細表(CF442)** | 1d | 2020-04-06 | 2020-04-06 |  |  |
| 197 | 2.2.1.6.1 | 補上TableSchema | 1d | 2020-04-06 | 2020-04-06 |  |  |
| 198 | 2.2.1.6.2 | 撰寫流程圖 | 1d | 2020-04-06 | 2020-04-06 |  |  |

| ID | WBS | Task | Duration | Start | Finish |
| --- | --- | --- | --- | --- | --- |
| 199 | 2.2.2 | **發票相關功能** | 8d | 2020-04-07 | 2020-04-16 |
| 200 | 2.2.2.1 | **發票建檔(CF107)** | 2d | 2020-04-07 | 2020-04-08 |
| 201 | 2.2.2.1.1 | 撰寫流程圖 | 2d | 2020-04-07 | 2020-04-08 |
| 202 | 2.2.2.1.2 | 補上TableSchema | 1d | 2020-04-08 | 2020-04-08 |
| 203 | 2.2.2.2 | **發票開立作業(CF204)** | 3d | 2020-04-08 | 2020-04-10 |
| 204 | 2.2.2.2.1 | 撰寫流程圖 | 3d | 2020-04-08 | 2020-04-10 |
| 205 | 2.2.2.2.2 | 補上TableSchema | 1d | 2020-04-10 | 2020-04-10 |
| 206 | 2.2.2.3 | **發票開立作業－非契約件(CF215)** | 1d | 2020-04-10 | 2020-04-10 |
| 207 | 2.2.2.3.1 | 撰寫流程圖 | 1d | 2020-04-10 | 2020-04-10 |
| 208 | 2.2.2.3.2 | 補上TableSchema | 1d | 2020-04-10 | 2020-04-10 |
| 209 | 2.2.2.4 | **滿福360批次發票開立(CF228)** | 1d | 2020-04-13 | 2020-04-13 |
| 210 | 2.2.2.4.1 | 撰寫流程圖 | 1d | 2020-04-13 | 2020-04-13 |
| 211 | 2.2.2.4.2 | 補上TableSchema | 1d | 2020-04-13 | 2020-04-13 |
| 212 | 2.2.2.5 | **發票批次銷退(CF230)** | 1d | 2020-04-14 | 2020-04-14 |
| 213 | 2.2.2.5.1 | 撰寫流程圖 | 1d | 2020-04-14 | 2020-04-14 |
| 214 | 2.2.2.5.2 | 補上TableSchema | 1d | 2020-04-14 | 2020-04-14 |
| 215 | 2.2.2.6 | **發票明細資料(CF438)** | 2d | 2020-04-14 | 2020-04-15 |
| 216 | 2.2.2.6.1 | 撰寫流程圖 | 1d | 2020-04-14 | 2020-04-14 |
| 217 | 2.2.2.6.2 | 補上TableSchema | 2d | 2020-04-14 | 2020-04-15 |
| 218 | 2.2.2.7 | **發票銷退折讓明細表(CF231)** | 1d | 2020-04-15 | 2020-04-15 |
| 219 | 2.2.2.7.1 | 撰寫流程圖 | 1d | 2020-04-15 | 2020-04-15 |
| 220 | 2.2.2.7.2 | 補上TableSchema | 1d | 2020-04-15 | 2020-04-15 |
| 221 | 2.2.2.8 | **電子發票列印(CF440)** | 2d | 2020-04-15 | 2020-04-16 |
| 222 | 2.2.2.8.1 | 補上TableSchema | 1d | 2020-04-15 | 2020-04-15 |
| 223 | 2.2.2.8.2 | 撰寫流程圖 | 2d | 2020-04-15 | 2020-04-16 |

| ID | WBS | Task | Duration | Start | Finish | Complete | 實際完成 |
| --- | --- | --- | --- | --- | --- | --- | --- |
| 224 | 2.2.3 | **信用卡相關功能** | 3d | 2020-04-16 | 2020-04-20 | 15% |  |
| 225 | 2.2.3.1 | **信用卡資料建檔(CF114)** | 1d | 2020-04-16 | 2020-04-16 |  |  |
| 226 | 2.2.3.1.1 | 撰寫流程圖 | 1d | 2020-04-16 | 2020-04-16 |  |  |
| 227 | 2.2.3.1.2 | 補上TableSchema | 1d | 2020-04-16 | 2020-04-16 |  |  |
| 228 | 2.2.3.2 | **紅陽/藍新回傳刷卡資料轉入(CF220)** | 2d | 2020-04-16 | 2020-04-17 | 20% |  |
| 229 | 2.2.3.2.1 | 撰寫流程圖 | 2d | 2020-04-16 | 2020-04-17 | 30% |  |
| 230 | 2.2.3.2.2 | 補上TableSchema | 1d | 2020-04-17 | 2020-04-17 |  |  |
| 231 | 2.2.3.3 | **紅陽/藍新代刷資料轉出(CF227)** | 1d | 2020-04-17 | 2020-04-17 |  |  |
| 232 | 2.2.3.3.1 | 撰寫流程圖 | 1d | 2020-04-17 | 2020-04-17 |  |  |
| 233 | 2.2.3.3.2 | 補上TableSchema | 1d | 2020-04-17 | 2020-04-17 |  |  |
| 234 | 2.2.3.4 | **信用卡繳款資料篩選(CF430)** | 1d | 2020-04-20 | 2020-04-20 | 50% |  |
| 235 | 2.2.3.4.1 | 撰寫流程圖 | 1d | 2020-04-20 | 2020-04-20 |  |  |
| 236 | 2.2.3.4.2 | 補上TableSchema | 1d | 2020-04-20 | 2020-04-20 | 100% | 2020-02-18T00:00:00.00Z |
| 237 | 2.2.3.5 | **失效件通知函列印-首次寄發版(CF453)** | 1d | 2020-04-20 | 2020-04-20 |  |  |
| 238 | 2.2.3.5.1 | 撰寫流程圖 | 1d | 2020-04-20 | 2020-04-20 |  |  |
| 239 | 2.2.3.5.2 | 補上TableSchema | 1d | 2020-04-20 | 2020-04-20 |  |  |
| 240 | 2.2.4 | **基本資料相關設定** | 7d | 2020-04-21 | 2020-04-29 | 100% | 2020-02-25T00:00:00.00Z |
| 241 | 2.2.4.1 | **密碼權限設定(CF101)** | 1d | 2020-04-21 | 2020-04-21 | 100% | 2020-02-18T00:00:00.00Z |
| 242 | 2.2.4.1.1 | 撰寫流程圖 | 1d | 2020-04-21 | 2020-04-21 | 100% | 2020-02-11T00:00:00.00Z |
| 243 | 2.2.4.1.2 | 補上TableSchema | 1d | 2020-04-21 | 2020-04-21 | 100% | 2020-02-18T00:00:00.00Z |
| 244 | 2.2.4.2 | **銀行代號設定(CF102)** | 1d | 2020-04-21 | 2020-04-21 | 100% | 2020-02-18T00:00:00.00Z |
| 245 | 2.2.4.2.1 | 撰寫流程圖 | 1d | 2020-04-21 | 2020-04-21 | 100% | 2020-02-11T00:00:00.00Z |
| 246 | 2.2.4.2.2 | 補上TableSchema | 1d | 2020-04-21 | 2020-04-21 | 100% | 2020-02-18T00:00:00.00Z |
| 247 | 2.2.4.3 | **國別代號設定(CF104)** | 1d | 2020-04-22 | 2020-04-22 | 100% | 2020-02-18T00:00:00.00Z |
| 248 | 2.2.4.3.1 | 撰寫流程圖 | 1d | 2020-04-22 | 2020-04-22 | 100% | 2020-02-18T00:00:00.00Z |
| 249 | 2.2.4.3.2 | 補上TableSchema | 1d | 2020-04-22 | 2020-04-22 | 100% | 2020-02-18T00:00:00.00Z |

| ID | WBS | Task | Duration | Start | Finish | Complete | 實際完成 |
| --- | --- | --- | --- | --- | --- | --- | --- |
| 250 | 2.2.4.4 | **郵遞區號設定(CF112)** | 1d | 2020-04-22 | 2020-04-22 | 100% | 2020-02-25T00:00:00.00Z |
| 251 | 2.2.4.4.1 | 撰寫流程圖 | 1d | 2020-04-22 | 2020-04-22 | 100% | 2020-02-25T00:00:00.00Z |
| 252 | 2.2.4.4.2 | 補上TableSchema | 1d | 2020-04-22 | 2020-04-22 | 100% | 2020-02-25T00:00:00.00Z |
| 253 | 2.2.4.5 | **收款性質代號設定(CF115)** | 1d | 2020-04-29 | 2020-04-29 | 100% | 2020-02-25T00:00:00.00Z |
| 254 | 2.2.4.5.1 | 補上TableSchema | 1d | 2020-04-29 | 2020-04-29 | 100% | 2020-02-25T00:00:00.00Z |
| 255 | 2.2.4.5.2 | 撰寫流程圖 | 1d | 2020-04-29 | 2020-04-29 | 100% | 2020-02-25T00:00:00.00Z |
| 256 | 2.2.5 | **業務員相關功能** | 1d | 2020-04-23 | 2020-04-23 | 16% |  |
| 257 | 2.2.5.1 | **業務員建檔(CF109)** | 1d | 2020-04-23 | 2020-04-23 | 50% |  |
| 258 | 2.2.5.1.1 | 補上TableSchema | 1d | 2020-04-23 | 2020-04-23 |  |  |
| 259 | 2.2.5.1.2 | 撰寫流程圖 | 1d | 2020-04-23 | 2020-04-23 | 100% | 2020-02-18T00:00:00.00Z |
| 260 | 2.2.5.2 | **業務員業績明細表(CF448)** | 1d | 2020-04-23 | 2020-04-23 |  |  |
| 261 | 2.2.5.2.1 | 補上TableSchema | 1d | 2020-04-23 | 2020-04-23 |  |  |
| 262 | 2.2.5.2.2 | 撰寫流程圖 | 1d | 2020-04-23 | 2020-04-23 |  |  |
| 263 | 2.2.5.3 | **業務津貼明細資料表(CF449)** | 1d | 2020-04-23 | 2020-04-23 |  |  |
| 264 | 2.2.5.3.1 | 補上TableSchema | 1d | 2020-04-23 | 2020-04-23 |  |  |
| 265 | 2.2.5.3.2 | 撰寫流程圖 | 1d | 2020-04-23 | 2020-04-23 |  |  |
| 266 | 2.2.6 | **客戶相關功能** | 2d | 2020-04-24 | 2020-04-27 | 22% |  |
| 267 | 2.2.6.1 | **客戶建檔(CF111)** | 1d | 2020-04-24 | 2020-04-24 | 90% |  |
| 268 | 2.2.6.1.1 | 撰寫流程圖 | 1d | 2020-04-24 | 2020-04-24 | 80% | 2020-02-25T00:00:00.00Z |
| 269 | 2.2.6.1.2 | 補上TableSchema | 1d | 2020-04-24 | 2020-04-24 | 100% | 2020-02-25T00:00:00.00Z |
| 270 | 2.2.6.2 | **客戶資料明細表(CF416)** | 2d | 2020-04-24 | 2020-04-27 |  |  |
| 271 | 2.2.6.2.1 | 補上TableSchema | 1d | 2020-04-24 | 2020-04-24 |  |  |
| 272 | 2.2.6.2.2 | 撰寫流程圖 | 1d | 2020-04-24 | 2020-04-24 |  |  |
| 273 | 2.2.6.2.3 | **銷貨退回證明單(CF436)** | 1d | 2020-04-27 | 2020-04-27 |  |  |
| 274 | 2.2.6.2.3.1 | 補上TableSchema | 1d | 2020-04-27 | 2020-04-27 |  |  |
| 275 | 2.2.6.2.3.2 | 撰寫流程圖 | 1d | 2020-04-27 | 2020-04-27 |  |  |

| ID | WBS | Task | Duration | Start | Finish |
| --- | --- | --- | --- | --- | --- |
| 276 | 2.2.6.3 | **客戶地址列印(CF452)** | 1d | 2020-04-27 | 2020-04-27 |
| 277 | 2.2.6.3.1 | 補上TableSchema | 1d | 2020-04-27 | 2020-04-27 |
| 278 | 2.2.6.3.2 | 撰寫流程圖 | 1d | 2020-04-27 | 2020-04-27 |
| 279 | 2.2.7 | **轉入轉出相關功能** | 5d | 2020-04-22 | 2020-04-28 |
| 280 | 2.2.7.1 | **薪資代繳資料轉入(CF216)** | 1d | 2020-04-27 | 2020-04-27 |
| 281 | 2.2.7.1.1 | 補上TableSchema | 1d | 2020-04-27 | 2020-04-27 |
| 282 | 2.2.7.1.2 | 撰寫流程圖 | 1d | 2020-04-27 | 2020-04-27 |
| 283 | 2.2.7.2 | **銀行匯款資料轉入(CF214)** | 1d | 2020-04-27 | 2020-04-27 |
| 284 | 2.2.7.2.1 | 補上TableSchema | 1d | 2020-04-27 | 2020-04-27 |
| 285 | 2.2.7.2.2 | 撰寫流程圖 | 1d | 2020-04-27 | 2020-04-27 |
| 286 | 2.2.7.3 | **回傳郵局代繳資料轉入(CF210)** | 1d | 2020-04-28 | 2020-04-28 |
| 287 | 2.2.7.3.1 | 補上TableSchema | 1d | 2020-04-28 | 2020-04-28 |
| 288 | 2.2.7.3.2 | 撰寫流程圖 | 1d | 2020-04-28 | 2020-04-28 |
| 289 | 2.2.7.4 | **郵局代收資料轉出(CF226)** | 1d | 2020-04-28 | 2020-04-28 |
| 290 | 2.2.7.4.1 | 補上TableSchema | 1d | 2020-04-28 | 2020-04-28 |
| 291 | 2.2.7.4.2 | 撰寫流程圖 | 1d | 2020-04-28 | 2020-04-28 |
| 292 | 2.2.7.5 | **信託資料轉出(CF212)** | 1d | 2020-04-28 | 2020-04-28 |
| 293 | 2.2.7.5.1 | 補上TableSchema | 1d | 2020-04-28 | 2020-04-28 |
| 294 | 2.2.7.5.2 | 撰寫流程圖 | 1d | 2020-04-28 | 2020-04-28 |
| 295 | 2.2.7.6 | **經銷商建檔(CF110)** | 1d | 2020-04-22 | 2020-04-22 |
| 296 | 2.2.7.6.1 | 補上TableSchema | 1d | 2020-04-22 | 2020-04-22 |
| 297 | 2.2.7.6.2 | 撰寫流程圖 | 1d | 2020-04-22 | 2020-04-22 |
| 298 | 2.2.8 | **收款匯款相關功能** | 5d | 2020-04-29 | 2020-05-06 |
| 299 | 2.2.8.1 | **收款性質代號設定(CF115)** | 1d | 2020-04-29 | 2020-04-29 |
| 300 | 2.2.8.1.1 | 補上TableSchema | 1d | 2020-04-29 | 2020-04-29 |
| 301 | 2.2.8.1.2 | 撰寫流程圖 | 1d | 2020-04-29 | 2020-04-29 |

| ID | WBS | Task | Duration | Start | Finish |
| --- | --- | --- | --- | --- | --- |
| 302 | 2.2.8.2 | **收款資料登錄(CF205)** | 1d | 2020-04-29 | 2020-04-29 |
| 303 | 2.2.8.2.1 | 複製_補上TableSchema | 1d | 2020-04-29 | 2020-04-29 |
| 304 | 2.2.8.2.2 | 複製_撰寫流程圖 | 1d | 2020-04-29 | 2020-04-29 |
| 305 | 2.2.8.3 | **收款單明細資料(CF420)** | 1d | 2020-04-30 | 2020-04-30 |
| 306 | 2.2.8.3.1 | 補上TableSchema | 1d | 2020-04-30 | 2020-04-30 |
| 307 | 2.2.8.3.2 | 撰寫流程圖 | 1d | 2020-04-30 | 2020-04-30 |
| 308 | 2.2.8.4 | **收款單明細資料-非契約件(CF447)** | 1d | 2020-04-30 | 2020-04-30 |
| 309 | 2.2.8.4.1 | 補上TableSchema | 1d | 2020-04-30 | 2020-04-30 |
| 310 | 2.2.8.4.2 | 撰寫流程圖 | 1d | 2020-04-30 | 2020-04-30 |
| 311 | 2.2.8.5 | **匯款劃撥單套印(CF427)** | 1d | 2020-05-04 | 2020-05-04 |
| 312 | 2.2.8.5.1 | 補上TableSchema | 1d | 2020-05-04 | 2020-05-04 |
| 313 | 2.2.8.5.2 | 撰寫流程圖 | 1d | 2020-05-04 | 2020-05-04 |
| 314 | 2.2.8.6 | **催款查詢作業(CF302)** | 1d | 2020-05-04 | 2020-05-04 |
| 315 | 2.2.8.6.1 | **撰寫流程圖** | 1d | 2020-05-04 | 2020-05-04 |
| 316 | 2.2.8.6.1.1 | 補上TableSchema | 1d | 2020-05-04 | 2020-05-04 |
| 317 | 2.2.8.7 | **已繳分期款資料明細表(CF413)** | 2d | 2020-05-04 | 2020-05-05 |
| 318 | 2.2.8.7.1 | 補上TableSchema | 1d | 2020-05-04 | 2020-05-04 |
| 319 | 2.2.8.7.2 | 撰寫流程圖 | 1d | 2020-05-05 | 2020-05-05 |
| 320 | 2.2.8.8 | **分期繳款資料明細表-財務部(CF419)** | 1d | 2020-05-05 | 2020-05-05 |
| 321 | 2.2.8.8.1 | 補上TableSchema | 1d | 2020-05-05 | 2020-05-05 |
| 322 | 2.2.8.8.2 | 撰寫流程圖 | 1d | 2020-05-05 | 2020-05-05 |
| 323 | 2.2.8.9 | **分其繳款資料明細表-業務部(CF432)** | 1d | 2020-05-05 | 2020-05-05 |
| 324 | 2.2.8.9.1 | 補上TableSchema | 1d | 2020-05-05 | 2020-05-05 |
| 325 | 2.2.8.9.2 | 撰寫流程圖 | 1d | 2020-05-05 | 2020-05-05 |

| ID | WBS | Task | Duration | Start | Finish |
| --- | --- | --- | --- | --- | --- |
| 326 | 2.2.8.10 | **未繳款資料明細表(CF412)** | 2d | 2020-05-05 | 2020-05-06 |
| 327 | 2.2.8.10.1 | 補上TableSchema | 2d | 2020-05-05 | 2020-05-06 |
| 328 | 2.2.8.10.2 | 撰寫流程圖 | 1d | 2020-05-06 | 2020-05-06 |
| 329 | 2.2.9 | **塔位相關功能** | 1d | 2020-05-06 | 2020-05-06 |
| 330 | 2.2.9.1 | **塔位認列資料明細表(CF454)** | 1d | 2020-05-06 | 2020-05-06 |
| 331 | 2.2.9.1.1 | 補上TableSchema | 1d | 2020-05-06 | 2020-05-06 |
| 332 | 2.2.9.1.2 | 撰寫流程圖 | 1d | 2020-05-06 | 2020-05-06 |
| 333 | 2.2.9.2 | **塔位配置示意圖(CF443)** | 1d | 2020-05-06 | 2020-05-06 |
| 334 | 2.2.9.2.1 | 補上TableSchema | 1d | 2020-05-06 | 2020-05-06 |
| 335 | 2.2.9.2.2 | 撰寫流程圖 | 1d | 2020-05-06 | 2020-05-06 |
| 336 | 2.2.10 | **銷售相關功能** | 2d | 2020-05-07 | 2020-05-08 |
| 337 | 2.2.10.1 | **銷售件數統計分析(CF303)** | 1d | 2020-05-07 | 2020-05-07 |
| 338 | 2.2.10.1.1 | 補上TableSchema | 1d | 2020-05-07 | 2020-05-07 |
| 339 | 2.2.10.1.2 | 撰寫流程圖 | 1d | 2020-05-07 | 2020-05-07 |
| 340 | 2.2.10.2 | **專案銷售統計-專案別(CF304)** | 1d | 2020-05-07 | 2020-05-07 |
| 341 | 2.2.10.2.1 | 補上TableSchema | 1d | 2020-05-07 | 2020-05-07 |
| 342 | 2.2.10.2.2 | 撰寫流程圖 | 1d | 2020-05-07 | 2020-05-07 |
| 343 | 2.2.10.3 | **銷售資料統計(CF301)** | 1d | 2020-05-08 | 2020-05-08 |
| 344 | 2.2.10.3.1 | 補上TableSchema | 1d | 2020-05-08 | 2020-05-08 |
| 345 | 2.2.10.3.2 | 撰寫流程圖 | 1d | 2020-05-08 | 2020-05-08 |
| 346 | 2.2.10.4 | **銷貨退回證明單(CF436)** | 1d | 2020-05-08 | 2020-05-08 |
| 347 | 2.2.10.4.1 | 補上TableSchema | 1d | 2020-05-08 | 2020-05-08 |
| 348 | 2.2.10.4.2 | 撰寫流程圖 | 1d | 2020-05-08 | 2020-05-08 |
| 349 | 2.2.10.5 | **區域銷售件數統計表(CF446)** | 1d | 2020-05-08 | 2020-05-08 |
| 350 | 2.2.10.5.1 | 補上TableSchema | 1d | 2020-05-08 | 2020-05-08 |
| 351 | 2.2.10.5.2 | 撰寫流程圖 | 1d | 2020-05-08 | 2020-05-08 |

| ID | WBS | Task | Duration | Start | Finish | Complete | 實際完成 |
| --- | --- | --- | --- | --- | --- | --- | --- |
| 352 | 3 | **契約-作業流程** | 6d | 2020-02-11 | 2020-02-18 | 100% | 2020-02-18T00:00:00.00Z |
| 353 | 3.1 | 契約過戶作業 | 1d | 2020-02-11 | 2020-02-11 | 100% | 2020-02-11T00:00:00.00Z |
| 354 | 3.2 | 契約補發作業 | 1d | 2020-02-11 | 2020-02-11 | 100% | 2020-02-11T00:00:00.00Z |
| 355 | 3.3 | 契約繼承作業 | 1d | 2020-02-11 | 2020-02-11 | 100% | 2020-02-11T00:00:00.00Z |
| 356 | 3.4 | 幸福契約變更姓名作業 | 1d | 2020-02-11 | 2020-02-11 | 100% | 2020-02-18T00:00:00.00Z |
| 357 | 3.5 | 幸福契約解約作業 | 1d | 2020-02-11 | 2020-02-11 | 100% | 2020-02-18T00:00:00.00Z |
| 358 | 3.6 | 契約系統信用卡效期通知 | 1d | 2020-02-18 | 2020-02-18 | 100% | 2020-02-18T00:00:00.00Z |
| 359 | 4 | **禮儀** | 41d | 2020-03-10 | 2020-05-08 | 3% |  |
| 360 | 4.1 | **功能整理** | 4d | 2020-03-10 | 2020-03-13 | 25% |  |
| 361 | 4.1.1 | 列出主要功能 | 1d | 2020-03-10 | 2020-03-10 | 100% |  |
| 362 | 4.1.2 | 整理TableSchema大項目 | 3d | 2020-03-11 | 2020-03-13 |  |  |
| 363 | 4.2 | **功能清單** | 9d | 2020-03-16 | 2020-03-26 |  |  |
| 364 | 4.2.1 | **基本建檔維護** | 4d | 2020-03-16 | 2020-03-19 |  |  |
| 365 | 4.2.1.1 | 密碼權限設定(DC101) | 1d | 2020-03-16 | 2020-03-16 |  |  |
| 366 | 4.2.1.2 | 客戶資料建檔(DC102) | 1d | 2020-03-16 | 2020-03-16 |  |  |
| 367 | 4.2.1.3 | 郵遞區號設定(DC103) | 1d | 2020-03-17 | 2020-03-17 |  |  |
| 368 | 4.2.1.4 | 廠商基本資料建檔(DC106) | 1d | 2020-03-17 | 2020-03-17 |  |  |
| 369 | 4.2.1.5 | 產品代號設定(DC104) | 1d | 2020-03-18 | 2020-03-18 |  |  |
| 370 | 4.2.1.6 | 產品選項內容設定(DC105) | 2d | 2020-03-18 | 2020-03-19 |  |  |
| 371 | 4.2.2 | **日常建檔維護** | 5d | 2020-03-20 | 2020-03-26 |  |  |
| 372 | 4.2.2.1 | 殯儀服務資料登錄(DC201) | 5d | 2020-03-20 | 2020-03-26 |  |  |
| 373 | 4.3 | **報表** | 19d | 2020-04-13 | 2020-05-08 |  |  |
| 374 | 4.3.1 | 執行案件明細表(DC401) | 3d | 2020-04-13 | 2020-04-15 |  |  |
| 375 | 4.3.2 | 履約案件明細表(DC402) | 3d | 2020-04-16 | 2020-04-20 |  |  |
| 376 | 4.3.3 | 客戶資料明細表(DC404) | 3d | 2020-04-21 | 2020-04-23 |  |  |
| 377 | 4.3.4 | 客戶標籤地址列印(DC405) | 3d | 2020-04-24 | 2020-04-28 |  |  |
| 378 | 4.3.5 | 廠商資料明細表(DC406) | 3d | 2020-04-29 | 2020-05-04 |  |  |
| 379 | 4.3.6 | 百日對年追思信函(DC407) | 3d | 2020-05-06 | 2020-05-08 |  |  |

| ID | WBS | Task | Duration | Start | Finish | Complete | 實際完成 |
| --- | --- | --- | --- | --- | --- | --- | --- |
| 380 | 5 | **電子發票串接** | 3d | 2020-02-17 | 2020-02-19 | 33% |  |
| 381 | 5.1 | 整理轉檔格式 | 1d | 2020-02-17 | 2020-02-17 | 100% | 2020-02-24T00:00:00.00Z |
| 382 | 5.2 | 轉出符合格式文件 | 2d | 2020-02-18 | 2020-02-19 |  |  |
| 383 | 6 | **財會系統串接** | 7d | 2020-02-20 | 2020-03-02 |  |  |
| 384 | 6.1 | 整理轉檔格式 | 3d | 2020-02-20 | 2020-02-24 |  |  |
| 385 | 6.2 | 撰寫程式 | 4d | 2020-02-25 | 2020-03-02 |  |  |
| 386 | 7 | **塔陵** | 146d | 2019-12-02 | 2020-07-08 | 43% |  |
| 387 | 7.1 | **基本資料** | 25d | 2019-12-02 | 2020-01-06 | 100% | 2020-02-21T00:00:00.00Z |
| 388 | 7.1.1 | 資料表範圍確認 | 10d | 2019-12-02 | 2019-12-13 | 100% | 2020-02-11T00:00:00.00Z |
| 389 | 7.1.2 | **資料表設計** | 10d | 2019-12-16 | 2019-12-27 | 100% | 2020-02-11T00:00:00.00Z |
| 390 | 7.1.2.1 | 客戶 | 3d | 2019-12-16 | 2019-12-18 | 100% |  |
| 391 | 7.1.2.2 | 家族 | 3d | 2019-12-16 | 2019-12-18 | 100% |  |
| 392 | 7.1.2.3 | 經銷商 | 1d | 2019-12-19 | 2019-12-19 | 100% |  |
| 393 | 7.1.2.4 | 業務 | 1d | 2019-12-19 | 2019-12-19 | 100% |  |
| 394 | 7.1.2.5 | 常用代號設定 | 2d | 2019-12-19 | 2019-12-20 | 100% |  |
| 395 | 7.1.2.6 | 產品 | 2d | 2019-12-19 | 2019-12-20 | 100% |  |
| 396 | 7.1.2.7 | 棟別樓層區域 | 2d | 2019-12-19 | 2019-12-20 | 100% |  |
| 397 | 7.1.2.8 | 會計科目 | 1d | 2019-12-23 | 2019-12-23 | 100% |  |
| 398 | 7.1.2.9 | 費用管理 | 3d | 2019-12-23 | 2019-12-25 | 100% |  |
| 399 | 7.1.2.10 | 權狀 | 3d | 2019-12-25 | 2019-12-27 | 100% |  |
| 400 | 7.1.3 | 列出必要操作 | 5d | 2019-12-30 | 2020-01-06 | 100% | 2020-01-21T00:00:00.00Z |
| 401 | 7.2 | **塔墓銷售** | 29d | 2020-02-03 | 2020-03-13 | 100% | 2020-02-21T00:00:00.00Z |
| 402 | 7.2.1 | 資料表範圍確認 | 10d | 2020-02-03 | 2020-02-14 | 100% | 2020-02-11T00:00:00.00Z |
| 403 | 7.2.2 | **資料表設計** | 14d | 2020-02-17 | 2020-03-06 | 100% | 2020-02-11T00:00:00.00Z |
| 404 | 7.2.2.1 | 客戶參觀單 | 2d | 2020-02-17 | 2020-02-18 | 100% |  |
| 405 | 7.2.2.2 | 塔位墓地保留單(停用) | 1d | 2020-02-19 | 2020-02-19 | 100% |  |
| 406 | 7.2.2.3 | 銷售單 | 3d | 2020-02-20 | 2020-02-24 | 100% |  |
| 407 | 7.2.2.4 | 分期付款 | 2d | 2020-02-25 | 2020-02-26 | 100% |  |
| 408 | 7.2.2.5 | 發票開立 | 2d | 2020-02-27 | 2020-03-02 | 100% |  |
| 409 | 7.2.2.6 | 信用卡授權 | 1d | 2020-03-02 | 2020-03-02 | 100% |  |
| 410 | 7.2.2.7 | 行政異動收款 | 2d | 2020-03-02 | 2020-03-03 | 100% |  |
| 411 | 7.2.2.8 | 契約管理 | 1d | 2020-03-04 | 2020-03-04 | 100% |  |
| 412 | 7.2.2.9 | 權狀管理 | 3d | 2020-03-04 | 2020-03-06 | 100% |  |
| 413 | 7.2.2.10 | 收款紀錄 | 3d | 2020-03-04 | 2020-03-06 | 100% |  |
| 414 | 7.2.3 | 列出必要操作 | 5d | 2020-03-09 | 2020-03-13 | 100% | 2020-01-21T00:00:00.00Z |

Notes:
- 381: 整理提供各式電子發票項目之文字檔轉檔格式(上傳、銷退、折讓、作廢)
- 382: 相關系統轉出符合相關格式之文字檔，至文中相關Folder
- 384: 整理提供財會系統轉帳傳票之文字檔或Excel轉檔格式
- 385: 撰寫依據格式轉入會計系統之程式

| ID | WBS | Task | Duration | Start | Finish | Complete | 實際完成 |
| --- | --- | --- | --- | --- | --- | --- | --- |
| 415 | 7.3 | **供飯** | 35d | 2020-03-27 | 2020-05-19 |  |  |
| 416 | 7.3.1 | 資料表範圍確認 | 10d | 2020-03-27 | 2020-04-13 |  |  |
| 417 | 7.3.2 | 資料表設計 | 20d | 2020-04-14 | 2020-05-12 |  |  |
| 418 | 7.3.3 | 列出必要操作 | 5d | 2020-05-13 | 2020-05-19 |  |  |
| 419 | 7.4 | **琉璃佛** | 34d | 2020-05-20 | 2020-07-08 |  |  |
| 420 | 7.4.1 | 資料表範圍確認 | 10d | 2020-05-20 | 2020-06-02 |  |  |
| 421 | 7.4.2 | 資料表設計 | 20d | 2020-06-03 | 2020-07-02 |  |  |
| 422 | 7.4.3 | 列出必要操作 | 5d | 2020-07-02 | 2020-07-08 |  |  |
| 423 | 8 | **整理新系統(塔位,契約,塔陵)** | 7d | 2020-05-11 | 2020-05-19 |  |  |
| 424 | 8.1 | 列出必要功能 | 3d | 2020-05-11 | 2020-05-13 |  |  |
| 425 | 8.2 | 合併塔陵資料表 | 5d | 2020-05-11 | 2020-05-15 |  |  |
| 426 | 8.3 | 列出必要操作 | 4d | 2020-05-14 | 2020-05-19 |  |  |
| 427 | 9 | **法會** | 70d | 2020-04-06 | 2020-07-15 | 40% |  |
| 428 | 9.1 | **功能清單** | 70d | 2020-04-06 | 2020-07-15 | 41% |  |
| 429 | 9.1.1 | **基本建檔維護** | 9d | 2020-04-06 | 2020-04-16 | 24% |  |
| 430 | 9.1.1.1 | **發票建檔(PD102)** | 4d | 2020-04-06 | 2020-04-09 | 20% |  |
| 431 | 9.1.1.1.1 | 撰寫流程圖 | 4d | 2020-04-06 | 2020-04-09 |  |  |
| 432 | 9.1.1.1.2 | 補上Table Schema | 1d | 2020-04-06 | 2020-04-06 | 100% | 2020-02-11T00:00:00.00Z |
| 433 | 9.1.1.2 | **客戶建檔(PD103)** | 3d | 2020-04-10 | 2020-04-14 | 25% |  |
| 434 | 9.1.1.2.1 | 撰寫流程圖 | 3d | 2020-04-10 | 2020-04-14 |  |  |
| 435 | 9.1.1.2.2 | 補上Table Schema | 1d | 2020-04-10 | 2020-04-10 | 100% | 2020-02-11T00:00:00.00Z |
| 436 | 9.1.1.3 | **法會前置作業處理(PD109)** | 2d | 2020-04-15 | 2020-04-16 | 33% |  |
| 437 | 9.1.1.3.1 | 撰寫流程圖 | 2d | 2020-04-15 | 2020-04-16 |  |  |
| 438 | 9.1.1.3.2 | 補上Table Schema | 1d | 2020-04-15 | 2020-04-15 | 100% | 2020-02-11T00:00:00.00Z |

Notes:
- 423: 整合: 塔位+ 契約+塔陵-基本資料+塔陵-塔墓銷售
- 424: 整理有存活的功能.列出清單
- 426: 功能應該要有哪些操作繼續保留

| ID | WBS | Task | Duration | Start | Finish | Complete | 實際完成 |
| --- | --- | --- | --- | --- | --- | --- | --- |
| 439 | 9.1.2 | **日常建檔登錄** | 37d | 2020-04-17 | 2020-06-09 | 29% |  |
| 440 | 9.1.2.1 | **法會訂購資料登錄(PD201)** | 5d | 2020-04-17 | 2020-04-23 | 37% |  |
| 441 | 9.1.2.1.1 | 撰寫流程圖 | 5d | 2020-04-17 | 2020-04-23 |  |  |
| 442 | 9.1.2.1.2 | 補上Table Schema | 3d | 2020-04-17 | 2020-04-21 | 100% | 2020-02-11T00:00:00.00Z |
| 443 | 9.1.2.2 | **輔銷品訂購資料登錄(PD211)** | 8d | 2020-04-17 | 2020-04-28 | 25% |  |
| 444 | 9.1.2.2.1 | 撰寫流程圖 | 3d | 2020-04-24 | 2020-04-28 |  |  |
| 445 | 9.1.2.2.2 | 補上Table Schema | 1d | 2020-04-17 | 2020-04-17 | 100% | 2020-02-11T00:00:00.00Z |
| 446 | 9.1.2.3 | **展雲代辦資料登錄(PD214)** | 11d | 2020-04-17 | 2020-05-04 | 25% |  |
| 447 | 9.1.2.3.1 | 撰寫流程圖 | 3d | 2020-04-29 | 2020-05-04 |  |  |
| 448 | 9.1.2.3.2 | 補上Table Schema | 1d | 2020-04-17 | 2020-04-17 | 100% | 2020-02-11T00:00:00.00Z |
| 449 | 9.1.2.4 | **車券資料修改(PD224)** | 13d | 2020-04-17 | 2020-05-06 | 33% |  |
| 450 | 9.1.2.4.1 | 撰寫流程圖 | 2d | 2020-05-05 | 2020-05-06 |  |  |
| 451 | 9.1.2.4.2 | 補上Table Schema | 1d | 2020-04-17 | 2020-04-17 | 100% | 2020-02-11T00:00:00.00Z |
| 452 | 9.1.2.5 | **法會預購資料登錄(PD216)** | 17d | 2020-04-17 | 2020-05-12 | 20% |  |
| 453 | 9.1.2.5.1 | 撰寫流程圖 | 4d | 2020-05-07 | 2020-05-12 |  |  |
| 454 | 9.1.2.5.2 | 補上Table Schema | 1d | 2020-04-17 | 2020-04-17 | 100% | 2020-02-11T00:00:00.00Z |
| 455 | 9.1.2.6 | **往生者資料登錄(PD207)** | 21d | 2020-04-17 | 2020-05-18 | 20% |  |
| 456 | 9.1.2.6.1 | 撰寫流程圖 | 4d | 2020-05-13 | 2020-05-18 |  |  |
| 457 | 9.1.2.6.2 | 補上Table Schema | 1d | 2020-04-17 | 2020-04-17 | 100% | 2020-02-11T00:00:00.00Z |
| 458 | 9.1.2.7 | **聯合祭祀資料登錄(PD215)** | 25d | 2020-04-17 | 2020-05-22 | 20% |  |
| 459 | 9.1.2.7.1 | 撰寫流程圖 | 4d | 2020-05-19 | 2020-05-22 |  |  |
| 460 | 9.1.2.7.2 | 補上Table Schema | 1d | 2020-04-17 | 2020-04-17 | 100% | 2020-02-11T00:00:00.00Z |
| 461 | 9.1.2.8 | **法會蓮位資料登錄(PD203)** | 27d | 2020-04-17 | 2020-05-26 | 33% |  |
| 462 | 9.1.2.8.1 | 撰寫流程圖 | 2d | 2020-05-25 | 2020-05-26 |  |  |
| 463 | 9.1.2.8.2 | 補上Table Schema | 1d | 2020-04-17 | 2020-04-17 | 100% | 2020-02-11T00:00:00.00Z |

| ID | WBS | Task | Duration | Start | Finish | Complete | 實際完成 |
| --- | --- | --- | --- | --- | --- | --- | --- |
| 464 | 9.1.2.9 | **法會供品資料登錄(PD202)** | 28d | 2020-04-20 | 2020-05-28 | 33% |  |
| 465 | 9.1.2.9.1 | 撰寫流程圖 | 2d | 2020-05-27 | 2020-05-28 |  |  |
| 466 | 9.1.2.9.2 | 補上Table Schema | 1d | 2020-04-20 | 2020-04-20 | 100% | 2020-02-11T00:00:00.00Z |
| 467 | 9.1.2.10 | **法會長生祿位資料登錄(PD219)** | 27d | 2020-04-23 | 2020-06-01 | 33% |  |
| 468 | 9.1.2.10.1 | 撰寫流程圖 | 2d | 2020-05-29 | 2020-06-01 |  |  |
| 469 | 9.1.2.10.2 | 補上Table Schema | 1d | 2020-04-23 | 2020-04-23 | 100% | 2020-02-11T00:00:00.00Z |
| 470 | 9.1.2.11 | **法會延壽燈資料登錄(PD220)** | 26d | 2020-04-28 | 2020-06-03 | 33% |  |
| 471 | 9.1.2.11.1 | 撰寫流程圖 | 2d | 2020-06-02 | 2020-06-03 |  |  |
| 472 | 9.1.2.11.2 | 補上Table Schema | 1d | 2020-04-28 | 2020-04-28 | 100% | 2020-02-11T00:00:00.00Z |
| 473 | 9.1.2.12 | **法會功德主蓮位位別資料登錄(PD212)** | 25d | 2020-05-04 | 2020-06-05 | 33% |  |
| 474 | 9.1.2.12.1 | 撰寫流程圖 | 2d | 2020-06-04 | 2020-06-05 |  |  |
| 475 | 9.1.2.12.2 | 補上Table Schema | 1d | 2020-05-04 | 2020-05-04 | 100% | 2020-02-11T00:00:00.00Z |
| 476 | 9.1.2.13 | **法會收款資料登錄(PD204)** | 24d | 2020-05-07 | 2020-06-09 | 33% |  |
| 477 | 9.1.2.13.1 | 撰寫流程圖 | 2d | 2020-06-08 | 2020-06-09 |  |  |
| 478 | 9.1.2.13.2 | 補上Table Schema | 1d | 2020-05-07 | 2020-05-07 | 100% | 2020-02-11T00:00:00.00Z |
| 479 | 9.1.3 | **查詢** | 26d | 2020-05-11 | 2020-06-15 | 50% |  |
| 480 | 9.1.3.1 | **奉厝資料查詢(PD302)** | 23d | 2020-05-11 | 2020-06-10 | 50% |  |
| 481 | 9.1.3.1.1 | 撰寫流程圖 | 1d | 2020-06-10 | 2020-06-10 |  |  |
| 482 | 9.1.3.1.2 | 補上Table Schema | 1d | 2020-05-11 | 2020-05-11 | 100% | 2020-02-11T00:00:00.00Z |
| 483 | 9.1.3.2 | **往生者遷出資料查詢(PD308)** | 22d | 2020-05-13 | 2020-06-11 | 50% |  |
| 484 | 9.1.3.2.1 | 撰寫流程圖 | 1d | 2020-06-11 | 2020-06-11 |  |  |
| 485 | 9.1.3.2.2 | 補上Table Schema | 1d | 2020-05-13 | 2020-05-13 | 100% | 2020-02-11T00:00:00.00Z |
| 486 | 9.1.3.3 | **聯合祭祀資料查詢(PD306)** | 21d | 2020-05-15 | 2020-06-12 | 50% |  |
| 487 | 9.1.3.3.1 | 撰寫流程圖 | 1d | 2020-06-12 | 2020-06-12 |  |  |
| 488 | 9.1.3.3.2 | 補上Table Schema | 1d | 2020-05-15 | 2020-05-15 | 100% | 2020-02-11T00:00:00.00Z |

| ID | WBS | Task | Duration | Start | Finish | Complete | 實際完成 |
| --- | --- | --- | --- | --- | --- | --- | --- |
| 489 | 9.1.3.4 | **法會訂購資料查詢(PD301)** | 20d | 2020-05-19 | 2020-06-15 | 50% |  |
| 490 | 9.1.3.4.1 | 撰寫流程圖 | 1d | 2020-06-15 | 2020-06-15 |  |  |
| 491 | 9.1.3.4.2 | 補上Table Schema | 1d | 2020-05-19 | 2020-05-19 | 100% | 2020-02-11T00:00:00.00Z |
| 492 | 9.1.4 | **日常相關銷售報表** | 23d | 2020-05-21 | 2020-06-22 | 45% |  |
| 493 | 9.1.4.1 | **展雲代辦資料明細表(PD449)** | 19d | 2020-05-21 | 2020-06-16 | 50% |  |
| 494 | 9.1.4.1.1 | 撰寫流程圖 | 1d | 2020-06-16 | 2020-06-16 |  |  |
| 495 | 9.1.4.1.2 | 補上Table Schema | 1d | 2020-05-21 | 2020-05-21 | 100% | 2020-02-11T00:00:00.00Z |
| 496 | 9.1.4.2 | **輔銷品訂購資料明細表(PD442)** | 18d | 2020-05-25 | 2020-06-17 | 50% |  |
| 497 | 9.1.4.2.1 | 撰寫流程圖 | 1d | 2020-06-17 | 2020-06-17 |  |  |
| 498 | 9.1.4.2.2 | 補上Table Schema | 1d | 2020-05-25 | 2020-05-25 | 100% | 2020-02-11T00:00:00.00Z |
| 499 | 9.1.4.3 | **每日收入統計表(PD478)** | 17d | 2020-05-28 | 2020-06-19 | 33% |  |
| 500 | 9.1.4.3.1 | 撰寫流程圖 | 2d | 2020-06-18 | 2020-06-19 |  |  |
| 501 | 9.1.4.3.2 | 補上Table Schema | 1d | 2020-05-28 | 2020-05-28 | 100% | 2020-02-11T00:00:00.00Z |
| 502 | 9.1.4.4 | **法會預購資料明細表(PD464)** | 16d | 2020-06-01 | 2020-06-22 | 50% |  |
| 503 | 9.1.4.4.1 | 撰寫流程圖 | 1d | 2020-06-22 | 2020-06-22 |  |  |
| 504 | 9.1.4.4.2 | 補上Table Schema | 1d | 2020-06-01 | 2020-06-01 | 100% | 2020-02-11T00:00:00.00Z |
| 505 | 9.1.5 | **法會確認函相關報表** | 18d | 2020-06-03 | 2020-06-30 | 50% |  |
| 506 | 9.1.5.1 | **確認函列印(PD426)** | 15d | 2020-06-03 | 2020-06-23 | 50% |  |
| 507 | 9.1.5.1.1 | 撰寫流程圖 | 1d | 2020-06-23 | 2020-06-23 |  |  |
| 508 | 9.1.5.1.2 | 補上Table Schema | 1d | 2020-06-03 | 2020-06-03 | 100% | 2020-02-11T00:00:00.00Z |
| 509 | 9.1.5.2 | **電子發票列印(PD460)** | 14d | 2020-06-05 | 2020-06-24 | 50% |  |
| 510 | 9.1.5.2.1 | 撰寫流程圖 | 1d | 2020-06-24 | 2020-06-24 |  |  |
| 511 | 9.1.5.2.2 | 補上Table Schema | 1d | 2020-06-05 | 2020-06-05 | 100% | 2020-02-11T00:00:00.00Z |
| 512 | 9.1.5.3 | **確認函地址標籤列印(PD413)** | 13d | 2020-06-09 | 2020-06-29 | 50% |  |
| 513 | 9.1.5.3.1 | 撰寫流程圖 | 1d | 2020-06-29 | 2020-06-29 |  |  |
| 514 | 9.1.5.3.2 | 補上Table Schema | 1d | 2020-06-09 | 2020-06-09 | 100% | 2020-02-11T00:00:00.00Z |

| ID | WBS | Task | Duration | Start | Finish | Complete | 實際完成 |
| --- | --- | --- | --- | --- | --- | --- | --- |
| 515 | 9.1.5.4 | **記名菩薩領取券列印(PD446)** | 12d | 2020-06-11 | 2020-06-30 | 50% |  |
| 516 | 9.1.5.4.1 | 撰寫流程圖 | 1d | 2020-06-30 | 2020-06-30 |  |  |
| 517 | 9.1.5.4.2 | 補上Table Schema | 1d | 2020-06-11 | 2020-06-11 | 100% | 2020-02-11T00:00:00.00Z |
| 518 | 9.1.6 | **法會相關資料報表** | 25d | 2020-06-01 | 2020-07-07 | 47% |  |
| 519 | 9.1.6.1 | **訂購資料明細表(PD418)** | 2d | 2020-06-12 | 2020-06-15 | 50% |  |
| 520 | 9.1.6.1.1 | 撰寫流程圖 | 1d | 2020-06-12 | 2020-06-12 |  |  |
| 521 | 9.1.6.1.2 | 補上Table Schema | 1d | 2020-06-15 | 2020-06-15 | 100% | 2020-02-11T00:00:00.00Z |
| 522 | 9.1.6.2 | **收款資料明細表(PD402)** | 2d | 2020-06-16 | 2020-06-17 | 50% |  |
| 523 | 9.1.6.2.1 | 撰寫流程圖 | 1d | 2020-06-16 | 2020-06-16 |  |  |
| 524 | 9.1.6.2.2 | 補上Table Schema | 1d | 2020-06-17 | 2020-06-17 | 100% | 2020-02-11T00:00:00.00Z |
| 525 | 9.1.6.3 | **功德文牒列印(PD427)** | 2d | 2020-06-18 | 2020-06-19 | 50% |  |
| 526 | 9.1.6.3.1 | 撰寫流程圖 | 1d | 2020-06-18 | 2020-06-18 |  |  |
| 527 | 9.1.6.3.2 | 補上Table Schema | 1d | 2020-06-19 | 2020-06-19 | 100% | 2020-02-11T00:00:00.00Z |
| 528 | 9.1.6.4 | **往生蓮位/香位列印(PD423)** | 2d | 2020-06-22 | 2020-06-23 | 50% |  |
| 529 | 9.1.6.4.1 | 撰寫流程圖 | 1d | 2020-06-22 | 2020-06-22 |  |  |
| 530 | 9.1.6.4.2 | 補上Table Schema | 1d | 2020-06-23 | 2020-06-23 | 100% | 2020-02-11T00:00:00.00Z |
| 531 | 9.1.6.5 | **車券資料明細表(PD405)** | 2d | 2020-06-24 | 2020-06-29 | 50% |  |
| 532 | 9.1.6.5.1 | 撰寫流程圖 | 1d | 2020-06-24 | 2020-06-24 |  |  |
| 533 | 9.1.6.5.2 | 補上Table Schema | 1d | 2020-06-29 | 2020-06-29 | 100% | 2020-02-11T00:00:00.00Z |
| 534 | 9.1.6.6 | **祭祀資料配置圖(PD429)** | 2d | 2020-06-30 | 2020-07-01 | 50% |  |
| 535 | 9.1.6.6.1 | 撰寫流程圖 | 1d | 2020-06-30 | 2020-06-30 |  |  |
| 536 | 9.1.6.6.2 | 補上Table Schema | 1d | 2020-07-01 | 2020-07-01 | 100% | 2020-02-11T00:00:00.00Z |
| 537 | 9.1.6.7 | **通知函劃撥單列印(PD408)** | 2d | 2020-07-02 | 2020-07-03 | 50% |  |
| 538 | 9.1.6.7.1 | 撰寫流程圖 | 1d | 2020-07-02 | 2020-07-02 |  |  |
| 539 | 9.1.6.7.2 | 補上Table Schema | 1d | 2020-07-03 | 2020-07-03 | 100% | 2020-02-11T00:00:00.00Z |

| ID | WBS | Task | Duration | Start | Finish | Complete | 實際完成 |
| --- | --- | --- | --- | --- | --- | --- | --- |
| 540 | 9.1.6.8 | **通知函客戶地址標籤列印(PD428)** | 2d | 2020-07-06 | 2020-07-07 | 50% |  |
| 541 | 9.1.6.8.1 | 撰寫流程圖 | 1d | 2020-07-06 | 2020-07-06 |  |  |
| 542 | 9.1.6.8.2 | 補上Table Schema | 1d | 2020-07-07 | 2020-07-07 | 100% | 2020-02-11T00:00:00.00Z |
| 543 | 9.1.6.9 | 台哥大通知函簡訊明細列印(PD444)(停用) | 1d | 2020-06-01 | 2020-06-01 |  |  |
| 544 | 9.1.7 | **奉厝資料相關報表** | 2d | 2020-07-08 | 2020-07-09 | 50% |  |
| 545 | 9.1.7.1 | **往生者使用登記簿(PD434)** | 2d | 2020-07-08 | 2020-07-09 | 50% |  |
| 546 | 9.1.7.1.1 | 撰寫流程圖 | 1d | 2020-07-08 | 2020-07-08 |  |  |
| 547 | 9.1.7.1.2 | 補上Table Schema | 1d | 2020-07-09 | 2020-07-09 | 100% | 2020-02-11T00:00:00.00Z |
| 548 | 9.1.8 | **聯合祭祀相關報表** | 4d | 2020-07-10 | 2020-07-15 | 50% |  |
| 549 | 9.1.8.1 | **聯合祭祀牌位列印(PD454)** | 2d | 2020-07-10 | 2020-07-13 | 50% |  |
| 550 | 9.1.8.1.1 | 撰寫流程圖 | 1d | 2020-07-10 | 2020-07-10 |  |  |
| 551 | 9.1.8.1.2 | 補上Table Schema | 1d | 2020-07-13 | 2020-07-13 | 100% | 2020-02-11T00:00:00.00Z |
| 552 | 9.1.8.2 | **聯合祭祀功德文牒列印(PD455)** | 2d | 2020-07-14 | 2020-07-15 | 50% |  |
| 553 | 9.1.8.2.1 | 撰寫流程圖 | 1d | 2020-07-14 | 2020-07-14 |  |  |
| 554 | 9.1.8.2.2 | 補上Table Schema | 1d | 2020-07-15 | 2020-07-15 | 100% | 2020-02-11T00:00:00.00Z |
| 555 | 9.2 | **功能清單(待確認)** | 1d | 2020-06-01 | 2020-06-01 |  |  |
| 556 | 9.2.1 | **基本建檔維護** | 1d | 2020-06-01 | 2020-06-01 |  |  |
| 557 | 9.2.1.1 | 密碼權限設定(PD101) | 1d | 2020-06-01 | 2020-06-01 |  |  |
| 558 | 9.2.1.2 | 法會發票資料異動處理(PD111) | 1d | 2020-06-01 | 2020-06-01 |  |  |
| 559 | 9.2.1.3 | 產品資料登錄(PD112) | 1d | 2020-06-01 | 2020-06-01 |  |  |
| 560 | 9.2.1.4 | 配置圖資料登錄(PD108) | 1d | 2020-06-01 | 2020-06-01 |  |  |
| 561 | 9.2.1.5 | 攺制地址更新處理(PD113) | 1d | 2020-06-01 | 2020-06-01 |  |  |
| 562 | 9.2.1.6 | 立薏系統資料匯出處理(PD114) | 1d | 2020-06-01 | 2020-06-01 |  |  |
| 563 | 9.2.1.7 | 往生者遷移/正位作業(PD105) | 1d | 2020-06-01 | 2020-06-01 |  |  |
| 564 | 9.2.1.8 | 奉厝資料錯誤更正作業(PD104) | 1d | 2020-06-01 | 2020-06-01 |  |  |

Notes:
- 543: 停用
- 555: 進一步與使用者確認是否有使用
- 557: 未使用
- 558: 未使用
- 559: 未使用
- 560: 未使用
- 561: 未使用
- 562: 移除
- 563: 未使用
- 564: 未使用

| ID | WBS | Task | Duration | Start | Finish |
| --- | --- | --- | --- | --- | --- |
| 565 | 9.2.2 | **日常建檔登錄** | 1d | 2020-06-01 | 2020-06-01 |
| 566 | 9.2.2.1 | 法會訂單資料分割(PD213) | 1d | 2020-06-01 | 2020-06-01 |
| 567 | 9.2.2.2 | 供飯祭祀資料登錄(PD218) | 1d | 2020-06-01 | 2020-06-01 |
| 568 | 9.2.2.3 | 積福供佛資料登錄(PD223) | 1d | 2020-06-01 | 2020-06-01 |
| 569 | 9.2.3 | **查詢** | 1d | 2020-06-01 | 2020-06-01 |
| 570 | 9.2.3.1 | 法會訂購資料統計(PD303) | 1d | 2020-06-01 | 2020-06-01 |
| 571 | 9.2.3.2 | 權狀持有人年齡統計分析(PD309) | 1d | 2020-06-01 | 2020-06-01 |
| 572 | 9.2.3.3 | 改制前地址查詢(PD307) | 1d | 2020-06-01 | 2020-06-01 |
| 573 | 9.2.3.4 | 客戶入塔數量統計(PD304) | 1d | 2020-06-01 | 2020-06-01 |
| 574 | 9.2.4 | **法會確認函相關報表** | 1d | 2020-06-01 | 2020-06-01 |
| 575 | 9.2.4.1 | 餐券列印(PD411) | 1d | 2020-06-01 | 2020-06-01 |
| 576 | 9.2.4.2 | 車券列印(PD412) | 1d | 2020-06-01 | 2020-06-01 |
| 577 | 9.2.5 | **法會相關資料報表** | 1d | 2020-06-01 | 2020-06-01 |
| 578 | 9.2.5.1 | 客戶訂購資料彙總表(PD401) | 1d | 2020-06-01 | 2020-06-01 |
| 579 | 9.2.5.2 | 法會客戶訂購總清冊(PD448) | 1d | 2020-06-01 | 2020-06-01 |
| 580 | 9.2.5.3 | 超薦名冊列印(PD436) | 1d | 2020-06-01 | 2020-06-01 |
| 581 | 9.2.5.4 | 長生祿位列印(PD476) | 1d | 2020-06-01 | 2020-06-01 |
| 582 | 9.2.5.5 | 記名菩薩領取清冊(PD447) | 1d | 2020-06-01 | 2020-06-01 |
| 583 | 9.2.5.6 | 供花名牌列印(PD438) | 1d | 2020-06-01 | 2020-06-01 |
| 584 | 9.2.5.7 | 延壽燈名牌列印(PD477) | 1d | 2020-06-01 | 2020-06-01 |
| 585 | 9.2.5.8 | 三角旗標籤列印(PD420) | 1d | 2020-06-01 | 2020-06-01 |
| 586 | 9.2.5.9 | 供品標示牌列印(PD452) | 1d | 2020-06-01 | 2020-06-01 |
| 587 | 9.2.5.10 | 供品禮盒標籤列印(PD445) | 1d | 2020-06-01 | 2020-06-01 |
| 588 | 9.2.5.11 | 供品-往生者標籤列印(PD422) | 1d | 2020-06-01 | 2020-06-01 |
| 589 | 9.2.5.12 | 供品-陽上弟子標籤列印(PD421) | 1d | 2020-06-01 | 2020-06-01 |
| 590 | 9.2.5.13 | 車券銷售分析表(PD474) | 1d | 2020-06-01 | 2020-06-01 |
| 591 | 9.2.5.14 | 餐券資料明細表(PD404) | 1d | 2020-06-01 | 2020-06-01 |
| 592 | 9.2.5.15 | 祭祀資料配置資料明細表(PD424) | 1d | 2020-06-01 | 2020-06-01 |
| 593 | 9.2.5.16 | 祭祀資料校核明細表(PD407) | 1d | 2020-06-01 | 2020-06-01 |
| 594 | 9.2.5.17 | 未奉厝蓮位優惠權益明細表(PD470) | 1d | 2020-06-01 | 2020-06-01 |
| 595 | 9.2.5.18 | 法會往生蓮位優惠權益通知函(PD467) | 1d | 2020-06-01 | 2020-06-01 |
| 596 | 9.2.5.19 | 客戶基本資料表-催量(PD425) | 1d | 2020-06-01 | 2020-06-01 |

Notes:
- 566: 未使用
- 567: 無作用
- 568: 未使用
- 570: 未使用
- 571: 未使用
- 572: 未使用
- 573: 未使用
- 575: 未使用
- 576: 未使用

| ID | WBS | Task | Duration | Start | Finish |
| --- | --- | --- | --- | --- | --- |
| 597 | 9.2.6 | **奉厝資料相關報表** | 1d | 2020-06-01 | 2020-06-01 |
| 598 | 9.2.6.1 | 備註資料明細表(PD463) | 1d | 2020-06-01 | 2020-06-01 |
| 599 | 9.2.6.2 | 奉厝關懷信函(PD465) | 1d | 2020-06-01 | 2020-06-01 |
| 600 | 9.2.6.3 | 往生者忌日月報表(PD430) | 1d | 2020-06-01 | 2020-06-01 |
| 601 | 9.2.6.4 | 奉厝申請人暨家屬資料明細表(PD473) | 1d | 2020-06-01 | 2020-06-01 |
| 602 | 9.2.6.5 | 奉厝資料明細表(PD453) | 1d | 2020-06-01 | 2020-06-01 |
| 603 | 9.2.6.6 | 往生者文件缺繳明細表(PD443) | 1d | 2020-06-01 | 2020-06-01 |
| 604 | 9.2.6.7 | 往生者資料重複校對表(PD433) | 1d | 2020-06-01 | 2020-06-01 |
| 605 | 9.2.6.8 | 往生者名牌製作資料表(PD435) | 1d | 2020-06-01 | 2020-06-01 |
| 606 | 9.2.6.9 | 往生者資料輸入校對表(PD437) | 1d | 2020-06-01 | 2020-06-01 |
| 607 | 9.2.6.10 | 奉厝資料明細統計表(PD462) | 1d | 2020-06-01 | 2020-06-01 |
| 608 | 9.2.6.11 | 奉厝資料統計表-客戶樓層產品別(PD461) | 1d | 2020-06-01 | 2020-06-01 |
| 609 | 9.2.7 | **聯合祭祀相關報表** | 1d | 2020-06-01 | 2020-06-01 |
| 610 | 9.2.7.1 | 聯合祭祀通知信函(PD466) | 1d | 2020-06-01 | 2020-06-01 |
| 611 | 9.2.7.2 | 聯合祭祀客戶連絡名冊(PD472) | 1d | 2020-06-01 | 2020-06-01 |
| 612 | 9.2.7.3 | 聯合祭祀訂購統計表(PD458) | 1d | 2020-06-01 | 2020-06-01 |
| 613 | 9.2.7.4 | 聯合祭祀業績/獎金統計表(PD468) | 1d | 2020-06-01 | 2020-06-01 |
| 614 | 9.2.7.5 | 聯合祭祀未收款/贈送/優惠資料明細表(PD469) | 1d | 2020-06-01 | 2020-06-01 |
| 615 | 9.2.7.6 | 聯合祭祀供品標示牌列印(PD471) | 1d | 2020-06-01 | 2020-06-01 |
| 616 | 9.2.7.7 | 積福供佛牌位列印(PD483) | 1d | 2020-06-01 | 2020-06-01 |
| 617 | 9.2.7.8 | 供佛消災祈福名冊列印(PD484) | 1d | 2020-06-01 | 2020-06-01 |
| 618 | 9.2.7.9 | 供佛佛像狀況表列印(PD486) | 1d | 2020-06-01 | 2020-06-01 |
| 619 | 9.2.7.10 | 聯合祭祀超薦名冊(PD456) | 1d | 2020-06-01 | 2020-06-01 |
| 620 | 9.2.7.11 | 聯合祭祀超薦名細表(PD457) | 1d | 2020-06-01 | 2020-06-01 |
| 621 | 9.2.7.12 | 聯合祭祀照片/發票地址標籤列印(PD459) | 1d | 2020-06-01 | 2020-06-01 |

| ID | WBS | Task | Duration | Start | Finish |
| --- | --- | --- | --- | --- | --- |
| 622 | 10 | **整理新系統(法會)** | 10d | 2020-07-20 | 2020-07-31 |
| 623 | 10.1 | 列出必要功能 | 5d | 2020-07-20 | 2020-07-24 |
| 624 | 10.2 | 列出必要操作 | 5d | 2020-07-27 | 2020-07-31 |
| 625 | 11 | **招商** | 25d | 2020-06-01 | 2020-07-07 |
| 626 | 11.1 | **廠商會面** | 10d | 2020-06-01 | 2020-06-12 |
| 627 | 11.1.1 | 金財通 | 10d | 2020-06-01 | 2020-06-12 |
| 628 | 11.2 | 簽呈,簽訂合約 | 15d | 2020-06-15 | 2020-07-07 |
| 629 | 12 | **廠商開發** | 271d | 2020-07-13 | 2021-07-30 |
| 630 | 12.1 | **開發內容談論** | 30d | 2020-07-13 | 2020-08-21 |
| 631 | 12.1.1 | **與廠商協商SA內容(塔位契約禮儀法會)** | 25d | 2020-07-13 | 2020-08-14 |
| 632 | 12.1.1.1 | 主功能一覽表 | 10d | 2020-07-13 | 2020-07-24 |
| 633 | 12.1.1.2 | 各功能內的操作 | 10d | 2020-07-27 | 2020-08-07 |
| 634 | 12.1.1.3 | TableSchema確認內容 | 20d | 2020-07-13 | 2020-08-07 |
| 635 | 12.1.1.4 | 最後確認SA內容 | 5d | 2020-08-10 | 2020-08-14 |
| 636 | 12.1.2 | **UI畫面指定** | 12d | 2020-07-13 | 2020-07-28 |
| 637 | 12.1.2.1 | 廠商確認能製作 | 5d | 2020-07-13 | 2020-07-17 |
| 638 | 12.1.2.2 | 詢問使用者意見 | 7d | 2020-07-20 | 2020-07-28 |
| 639 | 12.1.3 | **第一次合作(基本資料)** | 15d | 2020-08-03 | 2020-08-21 |
| 640 | 12.1.3.1 | 初版畫面確認 | 5d | 2020-08-03 | 2020-08-07 |
| 641 | 12.1.3.2 | 初版程式撰寫 | 5d | 2020-08-10 | 2020-08-14 |
| 642 | 12.1.3.3 | 第一版文件規格確認 | 3d | 2020-08-17 | 2020-08-19 |
| 643 | 12.1.3.4 | 確認第一次合作方式 | 5d | 2020-08-17 | 2020-08-21 |
| 644 | 12.2 | **塔位系統開發** | 80d | 2020-08-24 | 2020-12-16 |
| 645 | 12.2.1 | 正式開發 | 40d | 2020-08-24 | 2020-10-21 |
| 646 | 12.2.2 | 內部測試 | 20d | 2020-09-21 | 2020-10-21 |
| 647 | 12.2.3 | 外部測試 | 20d | 2020-10-22 | 2020-11-18 |
| 648 | 12.2.4 | 程式教學 | 20d | 2020-11-19 | 2020-12-16 |

Notes:
- 623: 功能應該要有哪些操作繼續保留
- 624: 功能應該要有哪些操作繼續保留
- 643: 與使用者確認內容
- 645: 資訊部內部測試 / 每月一次
- 647: 資訊部內部測試 / 每月一次

| ID | WBS | Task | Duration | Start | Finish |
| --- | --- | --- | --- | --- | --- |
| 649 | 12.3 | **契約系統開發** | 82d | 2020-10-22 | 2021-02-15 |
| 650 | 12.3.1 | 正式開發 | 40d | 2020-10-22 | 2020-12-16 |
| 651 | 12.3.2 | 內部測試 | 20d | 2020-11-23 | 2020-12-18 |
| 652 | 12.3.3 | 外部測試 | 20d | 2020-12-21 | 2021-01-18 |
| 653 | 12.3.4 | 程式教學 | 20d | 2021-01-19 | 2021-02-15 |
| 654 | 12.4 | **禮儀系統開發** | 50d | 2020-12-21 | 2021-03-01 |
| 655 | 12.4.1 | 正式開發 | 20d | 2020-12-21 | 2021-01-18 |
| 656 | 12.4.2 | 內部測試 | 10d | 2021-01-19 | 2021-02-01 |
| 657 | 12.4.3 | 外部測試 | 10d | 2021-02-02 | 2021-02-15 |
| 658 | 12.4.4 | 程式教學 | 10d | 2021-02-16 | 2021-03-01 |
| 659 | 12.5 | **法會系統開發** | 130d | 2021-02-01 | 2021-07-30 |
| 660 | 12.5.1 | 正式開發 | 70d | 2021-02-01 | 2021-05-07 |
| 661 | 12.5.2 | 內部測試 | 50d | 2021-03-01 | 2021-05-07 |
| 662 | 12.5.3 | 外部測試 | 30d | 2021-05-10 | 2021-06-18 |
| 663 | 12.5.4 | 程式教學 | 30d | 2021-06-21 | 2021-07-30 |
| 664 | 13 | **硬體** | 74d | 2020-07-13 | 2020-10-27 |
| 665 | 13.1 | 需求討論(軟體商) | 3d | 2020-07-13 | 2020-07-15 |
| 666 | 13.2 | 規格開立(軟體商) | 3d | 2020-07-16 | 2020-07-20 |
| 667 | 13.3 | 廠商報價 | 7d | 2020-07-21 | 2020-07-29 |
| 668 | 13.4 | 簽呈撰寫 | 2d | 2020-07-30 | 2020-07-31 |
| 669 | 13.5 | 採購 | 5d | 2020-08-03 | 2020-08-07 |
| 670 | 13.6 | 交機 | 45d | 2020-08-10 | 2020-10-14 |
| 671 | 13.7 | 驗收(資訊,軟體商) | 2d | 2020-10-15 | 2020-10-16 |
| 672 | 13.8 | 系統建置(資訊,軟體商) | 7d | 2020-10-19 | 2020-10-27 |

Notes:
- 650: 資訊部內部測試 / 每月一次
- 651: 資訊部內部測試 / 每月一次
- 652: 資訊部內部測試 / 每月一次
- 655: 資訊部內部測試 / 每月一次
- 657: 資訊部內部測試 / 每月一次
- 660: 資訊部內部測試 / 每月一次
- 662: 資訊部內部測試 / 每月一次
